# 项目进度计划V1.0new

Schedule from MS Project, 2020-03-06 to 2020-06-05, A marks actual dates.

## Calendars

- 标准: Mon-Sun 08:00-12:00, 13:00-17:00.

## Resources

| Resource |
| --- |
| 赵正阳 |
| 郭浩隆 |
| 沈一聪 |
| 梁远志 |
| 宋冰晨 |

## Schedule

| ID | WBS | Task | Type | Duration | Start | Finish | Predecessors | Complete | Baseline start | Baseline finish | Baseline duration | Resources | Work | Actual work |
| --- | --- | --- | --- | --- | --- | --- | --- | --- | --- | --- | --- | --- | --- | --- |
| 1 | 1 | 项目开始 | milestone | 0d | 2020-03-06 A | 2020-03-06 A |  | 100% | 2020-03-06 | 2020-03-06 | 0d |  |  |  |
| 2 | 2 | **1 实验准备** |  | 14d | 2020-03-06 A | 2020-03-19 A |  | 100% | 2020-03-06 | 2020-03-19 | 14d |  | 56.5h | 56.5h |
| 3 | 2.1 | **第2周** |  | 7d | 2020-03-06 A | 2020-03-12 A |  | 100% | 2020-03-06 | 2020-03-12 | 7d |  | 16h | 16h |
| 4 | 2.1.1 | 1.1 第1次组会：熟悉组员、明确组长和选题 |  | 1d | 2020-03-06 A | 2020-03-06 A |  | 100% | 2020-03-06 | 2020-03-06 | 1d | 郭浩隆 [2.5%]; 梁远志 [2.5%]; 沈一聪 [2.5%]; 宋冰晨 [2.5%]; 赵正阳 [2.5%] | 1h | 1h |
| 5 | 2.1.2 | 1.2 制作实验准备汇报PPT初稿 |  | 2d | 2020-03-07 A | 2020-03-08 A | 4 | 100% | 2020-03-07 | 2020-03-08 | 2d | 赵正阳 [12.5%] | 2h | 2h |
| 6 | 2.1.3 | 1.3 第2次组会：明确各个组员调研方向和对应的PPT部分 |  | 1d | 2020-03-09 A | 2020-03-09 A | 5 | 100% | 2020-03-09 | 2020-03-09 | 1d | 郭浩隆 [2.5%]; 梁远志 [2.5%]; 沈一聪 [2.5%]; 宋冰晨 [2.5%]; 赵正阳 [2.5%] | 1h | 1h |
| 7 | 2.1.4 | 1.4 形成实验准备汇报PPT第二版 |  | 3d | 2020-03-10 A | 2020-03-12 A | 6 | 100% | 2020-03-10 | 2020-03-12 | 3d | 梁远志 [2.8%]; 沈一聪 [2.8%]; 宋冰晨 [2.8%] | 2h | 2h |
| 8 | 2.1.5 | 1.5 调研scrapy |  | 3d | 2020-03-10 A | 2020-03-12 A | 6 | 100% | 2020-03-10 | 2020-03-12 | 3d | 郭浩隆 [8.3%]; 梁远志 [8.3%]; 沈一聪 [8.3%]; 宋冰晨 [8.3%]; 赵正阳 [8.3%] | 10h | 10h |
| 9 | 2.2 | **第3周** |  | 7d | 2020-03-13 A | 2020-03-19 A | 3 | 100% | 2020-03-13 | 2020-03-19 | 7d |  | 40.5h | 40.5h |
| 10 | 2.2.1 | 1.6 第3次组会：分配项目计划书任务 |  | 1d | 2020-03-13 A | 2020-03-13 A |  | 100% | 2020-03-13 | 2020-03-13 | 1d | 郭浩隆 [2.5%]; 梁远志 [2.5%]; 沈一聪 [2.5%]; 宋冰晨 [2.5%]; 赵正阳 [2.5%] | 1h | 1h |
| 11 | 2.2.2 | 1.7 根据分配的任务学习scrapy，阅读源码和文档 |  | 2d | 2020-03-14 A | 2020-03-15 A | 10 | 100% | 2020-03-14 | 2020-03-15 | 2d | 郭浩隆 [12.5%]; 梁远志 [12.5%]; 沈一聪 [12.5%]; 赵正阳 [12.5%] | 8h | 8h |
| 12 | 2.2.3 | 1.8 熟悉git的使用，编写工作日志的模板和使用规范并提交至github |  | 2d | 2020-03-14 A | 2020-03-15 A | 10 | 100% | 2020-03-14 | 2020-03-15 | 2d | 宋冰晨 [15.6%] | 2.5h | 2.5h |
| 13 | 2.2.4 | 1.9 学习MS Project、调研往届计算公式 |  | 2d | 2020-03-14 A | 2020-03-15 A | 10 | 100% | 2020-03-14 | 2020-03-15 | 2d | 宋冰晨 [25%] | 4h | 4h |
| 14 | 2.2.5 | 1.10 完成计划书可视化部分 |  | 2d | 2020-03-14 A | 2020-03-15 A | 10 | 100% | 2020-03-14 | 2020-03-15 | 2d | 郭浩隆 [6.2%] | 1h | 1h |
| 15 | 2.2.6 | 1.11 完成计划书反爬虫部分 |  | 2d | 2020-03-14 A | 2020-03-15 A | 10 | 100% | 2020-03-14 | 2020-03-15 | 2d | 沈一聪 [12.5%] | 2h | 2h |
| 16 | 2.2.7 | 1.12 完成计划书1-2节 |  | 2d | 2020-03-14 A | 2020-03-15 A | 10 | 100% | 2020-03-14 | 2020-03-15 | 2d | 赵正阳 [6.2%] | 1h | 1h |
| 17 | 2.2.8 | 1.13 完成计划书的甘特图、计算公式部分 |  | 2d | 2020-03-14 A | 2020-03-15 A | 10 | 100% | 2020-03-14 | 2020-03-15 | 2d | 宋冰晨 [25%] | 4h | 4h |
| 18 | 2.2.9 | 1.14 完成计划书分布式部分 |  | 1.5d | 2020-03-14 A | 2020-03-15 A | 10 | 100% | 2020-03-14 | 2020-03-15 | 1.5d | 梁远志 [12.5%] | 1.5h | 1.5h |
| 19 | 2.2.10 | 1.15 第4次组会：明确工作日志提交时间，确定项目大体需求 |  | 1d | 2020-03-16 A | 2020-03-16 A | 11, 12, 13, 14, 15, 16, 17, 18 | 100% | 2020-03-16 | 2020-03-16 | 1d | 郭浩隆 [2.5%]; 梁远志 [2.5%]; 沈一聪 [2.5%]; 宋冰晨 [2.5%]; 赵正阳 [2.5%] | 1h | 1h |
| 20 | 2.2.11 | 1.16 调研实验6和实验7的输出，编写实验准备汇报ppt的评审意见文档 |  | 3d | 2020-03-17 A | 2020-03-19 A | 19 | 100% | 2020-03-17 | 2020-03-19 | 3d | 宋冰晨 [4.2%] | 1h | 1h |
| 21 | 2.2.12 | 1.17 整合计划书 |  | 3d | 2020-03-17 A | 2020-03-19 A | 19 | 100% | 2020-03-17 | 2020-03-19 | 3d | 赵正阳 [4.2%] | 1h | 1h |
| 22 | 2.2.13 | 1.18 完成原型爬虫程序 |  | 3d | 2020-03-17 A | 2020-03-19 A | 19 | 100% | 2020-03-17 | 2020-03-19 | 3d | 赵正阳 [20.8%] | 5h | 5h |
| 23 | 2.2.14 | 1.19 阅读原型爬虫程序，思考反爬虫改进 |  | 3d | 2020-03-17 A | 2020-03-19 A | 19 | 100% | 2020-03-17 | 2020-03-19 | 3d | 沈一聪 [12.5%] | 3h | 3h |
| 24 | 2.2.15 | 1.20 部署Scraypd和Scrapydweb |  | 3d | 2020-03-17 A | 2020-03-19 A | 19 | 100% | 2020-03-17 | 2020-03-19 | 3d | 梁远志 [8.3%] | 2h | 2h |
| 25 | 2.2.16 | 1.21 scrapy实践：编写一个基于scrapy的简单爬虫 |  | 3d | 2020-03-17 A | 2020-03-19 A | 19 | 100% | 2020-03-17 | 2020-03-19 | 3d | 郭浩隆 [10.4%] | 2.5h | 2.5h |

| ID | WBS | Task | Duration | Start | Finish | Predecessors | Complete | Baseline start | Baseline finish | Baseline duration | Resources | Work | Actual work |
| --- | --- | --- | --- | --- | --- | --- | --- | --- | --- | --- | --- | --- | --- |
| 26 | 3 | **2 软件需求分析** | 14d | 2020-03-20 A | 2020-04-02 A |  | 100% | 2020-03-20 | 2020-04-02 | 14d |  | 70h | 70h |
| 27 | 3.1 | **第4周** | 7d | 2020-03-20 A | 2020-03-26 A | 9 | 100% | 2020-03-20 | 2020-03-26 | 7d |  | 43h | 43h |
| 28 | 3.1.1 | 2.1 第5次组会：绘制用例图、分配需求文档 | 1d | 2020-03-20 A | 2020-03-20 A |  | 100% | 2020-03-20 | 2020-03-20 | 1d | 郭浩隆 [7.5%]; 梁远志 [7.5%]; 沈一聪 [7.5%]; 宋冰晨 [7.5%]; 赵正阳 [7.5%] | 3h | 3h |
| 29 | 3.1.2 | 2.2 完成需求规格说明书1、2节和scrapy需求分析部分 | 2d | 2020-03-21 A | 2020-03-22 A | 28 | 100% | 2020-03-21 | 2020-03-22 | 2d | 赵正阳 [31.2%] | 5h | 5h |
| 30 | 3.1.3 | 2.3 形成web ui部分需求文档 | 2d | 2020-03-21 A | 2020-03-22 A | 28 | 100% | 2020-03-21 | 2020-03-22 | 2d | 宋冰晨 [12.5%] | 2h | 2h |
| 31 | 3.1.4 | 2.4 重建github目录结构，计划书更新至1.3 | 2d | 2020-03-21 A | 2020-03-22 A | 28 | 100% | 2020-03-21 | 2020-03-22 | 2d | 宋冰晨 [6.2%] | 1h | 1h |
| 32 | 3.1.5 | 2.5 更新MS Project文档至2.0 | 3d | 2020-03-20 A | 2020-03-22 A |  | 100% | 2020-03-20 | 2020-03-22 | 3d | 宋冰晨 [8.3%] | 2h | 2h |
| 33 | 3.1.6 | 2.6 完成web ui部分20个RUCM | 2d | 2020-03-21 A | 2020-03-22 A | 28 | 100% | 2020-03-21 | 2020-03-22 | 2d | 郭浩隆 [18.8%] | 3h | 3h |
| 34 | 3.1.7 | 2.7 完成scrapyd需求文档及数据库部分 | 2d | 2020-03-21 A | 2020-03-22 A | 28 | 100% | 2020-03-21 | 2020-03-22 | 2d | 梁远志 [43.8%] | 7h | 7h |
| 35 | 3.1.8 | 2.8 完成后端及反爬虫部分需求文档 | 2d | 2020-03-21 A | 2020-03-22 A | 28 | 100% | 2020-03-21 | 2020-03-22 | 2d | 沈一聪 [31.2%] | 5h | 5h |
| 36 | 3.1.9 | 2.9 第6次组会：组员各自制作PPT | 1d | 2020-03-23 A | 2020-03-23 A | 29, 30, 33, 34, 35 | 100% | 2020-03-23 | 2020-03-23 | 1d | 郭浩隆 [1.2%]; 梁远志 [1.2%]; 沈一聪 [1.2%]; 宋冰晨 [1.2%]; 赵正阳 [1.2%] | 0.5h | 0.5h |
| 37 | 3.1.10 | 2.10 完成scrapyd及实验七PPT制作 | 2d | 2020-03-24 A | 2020-03-25 A | 36 | 100% | 2020-03-24 | 2020-03-25 | 2d | 梁远志 [12.5%] | 2h | 2h |
| 38 | 3.1.11 | 2.11 完成后端及反爬虫部分PPT制作 | 2d | 2020-03-24 A | 2020-03-25 A | 36 | 100% | 2020-03-24 | 2020-03-25 | 2d | 沈一聪 [12.5%] | 2h | 2h |
| 39 | 3.1.12 | 2.12 形成需求文档1.0 | 2d | 2020-03-24 A | 2020-03-25 A | 36 | 100% | 2020-03-24 | 2020-03-25 | 2d | 赵正阳 [12.5%] | 2h | 2h |
| 40 | 3.1.13 | 2.13 完成web ui原型1.0 | 2d | 2020-03-24 A | 2020-03-25 A | 36 | 100% | 2020-03-24 | 2020-03-25 | 2d | 宋冰晨 [37.5%] | 6h | 6h |
| 41 | 3.1.14 | 2.14 更新计划书至1.4 | 2d | 2020-03-24 A | 2020-03-25 A | 36 | 100% | 2020-03-24 | 2020-03-25 | 2d | 郭浩隆 [9.4%] | 1.5h | 1.5h |
| 42 | 3.1.15 | 2.15 形成需求文档汇报ppt | 1d | 2020-03-26 A | 2020-03-26 A | 37, 38, 39, 40, 41 | 100% | 2020-03-26 | 2020-03-26 | 1d | 赵正阳 [12.5%] | 1h | 1h |
| 43 | 3.2 | **第5周** | 7d | 2020-03-27 A | 2020-04-02 A | 27 | 100% | 2020-03-27 | 2020-04-02 | 7d |  | 27h | 27h |
| 44 | 3.2.1 | 2.16 第7次组会：确定对需求文档的修改分工、分配需求评审表格设计和实验8任务 | 1d | 2020-03-27 A | 2020-03-27 A |  | 100% | 2020-03-27 | 2020-03-27 | 1d | 郭浩隆 [2.5%]; 梁远志 [2.5%]; 沈一聪 [2.5%]; 宋冰晨 [2.5%]; 赵正阳 [2.5%] | 1h | 1h |
| 45 | 3.2.2 | 2.17 更新MS Project文档至3.0 | 3d | 2020-03-27 A | 2020-03-29 A |  | 100% | 2020-03-27 | 2020-03-29 | 3d | 宋冰晨 [4.2%] | 1h | 1h |
| 46 | 3.2.3 | 2.18 扩充需求分析文档的项目背景、用户特点、假定及约束 | 2d | 2020-03-28 A | 2020-03-29 A | 44 | 100% | 2020-03-28 | 2020-03-29 | 2d | 宋冰晨 [12.5%] | 2h | 2h |
| 47 | 3.2.4 | 2.19 调研Django | 3d | 2020-03-27 A | 2020-03-29 A |  | 100% | 2020-03-27 | 2020-03-29 | 3d | 赵正阳 [16.7%] | 4h | 4h |
| 48 | 3.2.5 | 2.20 形成工作量统计分析报告v1.0 | 2d | 2020-03-28 A | 2020-03-29 A | 44 | 100% | 2020-03-28 | 2020-03-29 | 2d | 赵正阳 [9.4%] | 1.5h | 1.5h |
| 49 | 3.2.6 | 2.21 补充了Scrapy框架需求分析的文字描述 | 2d | 2020-03-28 A | 2020-03-29 A | 44 | 100% | 2020-03-28 | 2020-03-29 | 2d | 赵正阳 [6.2%] | 1h | 1h |
| 50 | 3.2.7 | 2.22 扩充需求分析文档的后端需求RUCM文字说明、业务需求 | 2d | 2020-03-28 A | 2020-03-29 A | 44 | 100% | 2020-03-28 | 2020-03-29 | 2d | 沈一聪 [12.5%] | 2h | 2h |
| 51 | 3.2.8 | 2.23 完成需求分析评审表的设计 | 2d | 2020-03-28 A | 2020-03-29 A | 44 | 100% | 2020-03-28 | 2020-03-29 | 2d | 沈一聪 [12.5%] | 2h | 2h |
| 52 | 3.2.9 | 2.24 添加了Scrapyd的介绍、添加了各个RUCM的文字说明 | 2d | 2020-03-28 A | 2020-03-29 A | 44 | 100% | 2020-03-28 | 2020-03-29 | 2d | 梁远志 [12.5%] | 2h | 2h |
| 53 | 3.2.10 | 2.25 扩充web ui部分RUCM的文字描述 | 2d | 2020-03-28 A | 2020-03-29 A | 44 | 100% | 2020-03-28 | 2020-03-29 | 2d | 郭浩隆 [15.6%] | 2.5h | 2.5h |
| 54 | 3.2.11 | 2.26 第8次组会：确定编码、PPT分工 | 1d | 2020-03-30 A | 2020-03-30 A | 46, 48, 49, 50, 51, 52, 53 | 100% | 2020-03-30 | 2020-03-30 | 1d | 郭浩隆 [2.5%]; 梁远志 [2.5%]; 沈一聪 [2.5%]; 宋冰晨 [2.5%]; 赵正阳 [2.5%] | 1h | 1h |
| 55 | 3.2.12 | 2.27 完成需求规格说明书v1.1 | 2d | 2020-03-31 A | 2020-04-01 A | 54 | 100% | 2020-03-31 | 2020-04-01 | 2d | 赵正阳 [6.2%] | 1h | 1h |
| 56 | 3.2.13 | 2.28 完成需求分析评审表部分的PPT制作、练习PPT展示 | 2d | 2020-03-31 A | 2020-04-01 A | 54 | 100% | 2020-03-31 | 2020-04-01 | 2d | 沈一聪 [12.5%] | 2h | 2h |
| 57 | 3.2.14 | 2.29 完成实验6初始数据的展示部分PPT制作 | 2d | 2020-03-31 A | 2020-04-01 A | 54 | 100% | 2020-03-31 | 2020-04-01 | 2d | 宋冰晨 [12.5%] | 2h | 2h |
| 58 | 3.2.15 | 2.30 制作了实验7的展示幻灯片 | 2d | 2020-03-31 A | 2020-04-01 A | 54 | 100% | 2020-03-31 | 2020-04-01 | 2d | 梁远志 [6.2%] | 1h | 1h |
| 59 | 3.2.16 | 2.31 完成实验8的PPT部分及整合工作，形成第六周展示PPT | 1d | 2020-04-02 A | 2020-04-02 A | 55, 56, 57, 58 | 100% | 2020-04-02 | 2020-04-02 | 1d | 赵正阳 [12.5%] | 1h | 1h |

| ID | WBS | Task | Duration | Start | Finish | Predecessors | Complete | Baseline start | Baseline finish | Baseline duration | Constraint | Resources | Work | Actual work |
| --- | --- | --- | --- | --- | --- | --- | --- | --- | --- | --- | --- | --- | --- | --- |
| 60 | 4 | **3 软件需求评审** | 14d | 2020-04-03 A | 2020-04-16 A |  | 100% | 2020-04-03 | 2020-04-16 | 14d |  |  | 40.5h | 40.5h |
| 61 | 4.1 | **第6周** | 7d | 2020-04-03 A | 2020-04-09 A | 43 | 100% | 2020-04-03 | 2020-04-09 | 7d |  |  | 20h | 20h |
| 62 | 4.1.1 | 3.1 更新MS Project至4.0 | 4d | 2020-04-03 A | 2020-04-06 A |  | 100% | 2020-04-03 | 2020-04-06 | 4d |  | 宋冰晨 [4.7%] | 1.5h | 1.5h |
| 63 | 4.1.2 | 3.2 检查F组需求文档，形成12条评审意见 | 1d | 2020-04-06 A | 2020-04-06 A |  | 100% | 2020-04-06 | 2020-04-06 | 1d | start no earlier than 2020-04-06 | 梁远志 [12.5%] | 1h | 1h |
| 64 | 4.1.3 | 3.3 检查F组需求文档，形成14条评审意见 | 1d | 2020-04-06 A | 2020-04-06 A |  | 100% | 2020-04-06 | 2020-04-06 | 1d | start no earlier than 2020-04-06 | 沈一聪 [37.5%] | 3h | 3h |
| 65 | 4.1.4 | 3.4 检查G组需求文档，形成10条评审意见 | 1d | 2020-04-06 A | 2020-04-06 A |  | 100% | 2020-04-06 | 2020-04-06 | 1d | start no earlier than 2020-04-06 | 宋冰晨 [18.8%] | 1.5h | 1.5h |
| 66 | 4.1.5 | 3.5 检查G组需求文档，形成8条评审意见 | 1d | 2020-04-06 A | 2020-04-06 A |  | 100% | 2020-04-06 | 2020-04-06 | 1d | start no earlier than 2020-04-06 | 赵正阳 [12.5%] | 1h | 1h |
| 67 | 4.1.6 | 3.6 检查G组需求文档，形成6条评审意见 | 1d | 2020-04-06 A | 2020-04-06 A |  | 100% | 2020-04-06 | 2020-04-06 | 1d | start no earlier than 2020-04-06 | 郭浩隆 [12.5%] | 1h | 1h |
| 68 | 4.1.7 | 3.7 第9次组会：整合对F和G组的评审意见 | 1d | 2020-04-07 A | 2020-04-07 A | 63, 64, 65, 66, 67 | 100% | 2020-04-07 | 2020-04-07 | 1d |  | 郭浩隆 [5%]; 梁远志 [5%]; 沈一聪 [5%]; 宋冰晨 [5%]; 赵正阳 [5%] | 2h | 2h |
| 69 | 4.1.8 | 3.8 根据评审意见A-2、4、9、10、19和I-5、7、8、9、10、11、20、21、23形成需求文档v1.2.1，以及完成对应PPT的制作 | 0.3d | 2020-04-08 A | 2020-04-08 A |  | 100% | 2020-04-08 | 2020-04-08 | 0.3d | start no earlier than 2020-04-08 | 赵正阳 [41.7%] | 1h | 1h |
| 70 | 4.1.9 | 3.9 根据评审意见A-1、3、5和I-3形成需求文档v1.2.2，以及完成对应PPT的制作 | 0.3d | 2020-04-08 A | 2020-04-08 A | 69 | 100% | 2020-04-08 | 2020-04-08 | 0.3d |  | 宋冰晨 [83.3%] | 2h | 2h |
| 71 | 4.1.10 | 3.10 根据评审意见A-6和I-12、13、14形成需求文档v1.2.3，以及完成对应PPT的制作 | 0.3d | 2020-04-08 A | 2020-04-08 A | 70 | 100% | 2020-04-08 | 2020-04-08 | 0.3d |  | 郭浩隆 [83.3%] | 2h | 2h |
| 72 | 4.1.11 | 3.11 根据评审意见A-15、17、18和I-1、2、18、22、24形成需求文档v1.2.4，以及完成对应PPT的 | 0.3d | 2020-04-08 A | 2020-04-09 A | 71 | 100% | 2020-04-08 | 2020-04-09 | 0.3d |  | 梁远志 [62.5%] | 1.5h | 1.5h |
| 73 | 4.1.12 | 3.12 根据评审意见A-7、8、11、12、13、14、16和I-2、4、6、7、15、16、17、18、19形成需求文档v1.2.5，以及完成对应PPT的制作 | 0.3d | 2020-04-09 A | 2020-04-09 A | 72 | 100% | 2020-04-09 | 2020-04-09 | 0.3d |  | 沈一聪 [83.3%] | 2h | 2h |
| 74 | 4.1.13 | 3.13 整合形成第7周课堂汇报PPT | 0.5d | 2020-04-09 A | 2020-04-09 A | 73 | 100% | 2020-04-09 | 2020-04-09 | 0.5d |  | 赵正阳 [12.5%] | 0.5h | 0.5h |
| 75 | 4.2 | **第7周** | 7d | 2020-04-10 A | 2020-04-16 A | 61 | 100% | 2020-04-10 | 2020-04-16 | 7d |  |  | 20.5h | 20.5h |
| 76 | 4.2.1 | 3.14 更新MS Project至5.0 | 4d | 2020-04-10 A | 2020-04-13 A |  | 100% | 2020-04-10 | 2020-04-13 | 4d |  | 宋冰晨 [3.1%] | 1h | 1h |
| 77 | 4.2.2 | 3.15 检查I组需求文档，形成7条评审意见 | 1d | 2020-04-13 A | 2020-04-13 A |  | 100% | 2020-04-13 | 2020-04-13 | 1d | start no earlier than 2020-04-13 | 郭浩隆 [31.2%] | 2.5h | 2.5h |
| 78 | 4.2.3 | 3.16 检查I组需求文档，形成22条评审意见 | 1d | 2020-04-13 A | 2020-04-13 A |  | 100% | 2020-04-13 | 2020-04-13 | 1d | start no earlier than 2020-04-13 | 梁远志 [25%] | 2h | 2h |
| 79 | 4.2.4 | 3.17 检查I组需求文档，形成18条评审意见 | 1d | 2020-04-13 A | 2020-04-13 A |  | 100% | 2020-04-13 | 2020-04-13 | 1d | start no earlier than 2020-04-13 | 宋冰晨 [25%] | 2h | 2h |
| 80 | 4.2.5 | 3.18 检查A组需求文档，形成6条评审意见 | 1d | 2020-04-13 A | 2020-04-13 A |  | 100% | 2020-04-13 | 2020-04-13 | 1d | start no earlier than 2020-04-13 | 赵正阳 [12.5%] | 1h | 1h |
| 81 | 4.2.6 | 3.19 检查A组需求文档，形成17条评审意见 | 1d | 2020-04-13 A | 2020-04-13 A |  | 100% | 2020-04-13 | 2020-04-13 | 1d | start no earlier than 2020-04-13 | 沈一聪 [25%] | 2h | 2h |
| 82 | 4.2.7 | 3.20 第10次组会：整合对A和I组的评审意见 | 1d | 2020-04-14 A | 2020-04-14 A | 77, 78, 79, 80, 81 | 100% | 2020-04-14 | 2020-04-14 | 1d |  | 郭浩隆 [2.5%]; 梁远志 [2.5%]; 沈一聪 [2.5%]; 宋冰晨 [2.5%]; 赵正阳 [2.5%] | 1h | 1h |
| 83 | 4.2.8 | 3.21 根据评审意见F-1、2、9、10、11、15、16、17、18和G-1、2、6、10、11、14、15、16、21、22形成需求文档v1.3.0，以及完成对应PPT的制作 | 0.4d | 2020-04-15 A | 2020-04-15 A |  | 100% | 2020-04-15 | 2020-04-15 | 0.4d | start no earlier than 2020-04-15 | 赵正阳 [62.5%] | 2h | 2h |
| 84 | 4.2.9 | 3.22 根据评审意见F-4、5和G-3、7、8、9、18形成需求文档v1.3.1，以及完成对应PPT的制作 | 0.4d | 2020-04-15 A | 2020-04-15 A | 83 | 100% | 2020-04-15 | 2020-04-15 | 0.4d |  | 沈一聪 [62.5%] | 2h | 2h |
| 85 | 4.2.10 | 3.23 根据评审意见F-3和G-4、5、17、19、20形成需求文档v1.3.2，以及完成对应PPT的制作 | 0.4d | 2020-04-15 A | 2020-04-16 A | 84 | 100% | 2020-04-15 | 2020-04-16 | 0.4d |  | 梁远志 [62.5%] | 2h | 2h |
| 86 | 4.2.11 | 3.24 根据评审意见F-6、7、8、12、13、14、19、20、21和G-12、13形成需求文档v1.3.3，以及完成对应PPT的制作 | 0.4d | 2020-04-16 A | 2020-04-16 A | 85 | 100% | 2020-04-16 | 2020-04-16 | 0.4d |  | 宋冰晨 [78.1%] | 2.5h | 2.5h |
| 87 | 4.2.12 | 3.25 整合形成课堂汇报PPT | 0.4d | 2020-04-16 A | 2020-04-16 A | 86 | 100% | 2020-04-16 | 2020-04-16 | 0.4d |  | 赵正阳 [15.6%] | 0.5h | 0.5h |

| ID | WBS | Task | Duration | Start | Finish | Predecessors | Complete | Baseline start | Baseline finish | Baseline duration | Constraint | Resources | Work | Actual work |
| --- | --- | --- | --- | --- | --- | --- | --- | --- | --- | --- | --- | --- | --- | --- |
| 88 | 5 | **4 软件设计与实现** | 21d | 2020-04-17 A | 2020-05-07 A |  | 100% | 2020-04-17 | 2020-05-07 | 21d |  |  | 166h | 166h |
| 89 | 5.1 | **第8周** | 7d | 2020-04-17 A | 2020-04-23 A | 75 | 100% | 2020-04-17 | 2020-04-23 | 7d |  |  | 54.5h | 54.5h |
| 90 | 5.1.1 | 4.1 第11次组会：确定对评审组检查工作和初步开发工作的分工 | 1d | 2020-04-17 A | 2020-04-17 A |  | 100% | 2020-04-17 | 2020-04-17 | 1d |  | 郭浩隆 [2.5%]; 梁远志 [2.5%]; 沈一聪 [2.5%]; 宋冰晨 [2.5%]; 赵正阳 [2.5%] | 1h | 1h |
| 91 | 5.1.2 | 4.2 更新MS Project至6.0 | 5d | 2020-04-17 A | 2020-04-21 A |  | 100% | 2020-04-17 | 2020-04-21 | 5d |  | 宋冰晨 [5%] | 2h | 2h |
| 92 | 5.1.3 | 4.3 检查A、G组的修改情况 | 1d | 2020-04-21 A | 2020-04-21 A | 90 | 100% | 2020-04-21 | 2020-04-21 | 1d | start no earlier than 2020-04-21 | 赵正阳 [6.2%] | 0.5h | 0.5h |
| 93 | 5.1.4 | 4.4 检查A、F组的修改情况 | 1d | 2020-04-21 A | 2020-04-21 A | 90 | 100% | 2020-04-21 | 2020-04-21 | 1d | start no earlier than 2020-04-21 | 沈一聪 [12.5%] | 1h | 1h |
| 94 | 5.1.5 | 4.5 检查I、F组的修改情况 | 1d | 2020-04-21 A | 2020-04-21 A | 90 | 100% | 2020-04-21 | 2020-04-21 | 1d | start no earlier than 2020-04-21 | 梁远志 [12.5%] | 1h | 1h |
| 95 | 5.1.6 | 4.6 检查I、G组的修改情况 | 1d | 2020-04-21 A | 2020-04-21 A | 90 | 100% | 2020-04-21 | 2020-04-21 | 1d | start no earlier than 2020-04-21 | 宋冰晨 [12.5%] | 1h | 1h |
| 96 | 5.1.7 | 4.7 检查I、G组的修改情况 | 1d | 2020-04-21 A | 2020-04-21 A | 90 | 100% | 2020-04-21 | 2020-04-21 | 1d | start no earlier than 2020-04-21 | 郭浩隆 [25%] | 2h | 2h |
| 97 | 5.1.8 | 4.8 完成基本网站后端开发 | 4d | 2020-04-18 A | 2020-04-21 A | 90 | 100% | 2020-04-18 | 2020-04-21 | 4d |  | 赵正阳 [25%] | 8h | 8h |
| 98 | 5.1.9 | 4.9 实现针对普通用户的静态页面 | 4d | 2020-04-18 A | 2020-04-21 A | 90 | 100% | 2020-04-18 | 2020-04-21 | 4d |  | 宋冰晨 [31.2%] | 10h | 10h |
| 99 | 5.1.10 | 4.10 完成Top250movie的爬虫 | 4d | 2020-04-18 A | 2020-04-21 A | 90 | 100% | 2020-04-18 | 2020-04-21 | 4d |  | 沈一聪 [25%] | 8h | 8h |
| 100 | 5.1.11 | 4.11 完成调度器基本的节点操作和作业操作 | 4d | 2020-04-18 A | 2020-04-21 A | 90 | 100% | 2020-04-18 | 2020-04-21 | 4d |  | 梁远志 [12.5%] | 4h | 4h |
| 101 | 5.1.12 | 4.12 完成用户登录、注册等静态页面的编写 | 4d | 2020-04-18 A | 2020-04-21 A | 90 | 100% | 2020-04-18 | 2020-04-21 | 4d |  | 郭浩隆 [21.9%] | 7h | 7h |
| 102 | 5.1.13 | 4.13 第12次组会：组员展示目前的开发进展，确定对评审的4个组的排序规则和下一步的开发工作目标 | 1d | 2020-04-22 A | 2020-04-22 A | 97, 98, 99, 100, 101 | 100% | 2020-04-22 | 2020-04-22 | 1d |  | 郭浩隆 [3.8%]; 梁远志 [3.8%]; 沈一聪 [3.8%]; 宋冰晨 [3.8%]; 赵正阳 [3.8%] | 1.5h | 1.5h |
| 103 | 5.1.14 | 4.14 协调GitHub上项目分工合并 | 1d | 2020-04-22 A | 2020-04-22 A | 97, 98, 101 | 100% | 2020-04-22 | 2020-04-22 | 1d |  | 梁远志 [25%] | 2h | 2h |
| 104 | 5.1.15 | 4.15 形成工作量统计分析报告v1.1 | 0.5d | 2020-04-23 A | 2020-04-23 A | 102 | 100% | 2020-04-23 | 2020-04-23 | 0.5d |  | 赵正阳 [12.5%] | 0.5h | 0.5h |
| 105 | 5.1.16 | 4.16 与梁远志探讨了项目的数据库结构、参数接口、调度等方面的设计，形成设计文档 | 1d | 2020-04-23 A | 2020-04-23 A | 102 | 100% | 2020-04-23 | 2020-04-23 | 1d |  | 沈一聪 [25%] | 2h | 2h |
| 106 | 5.1.17 | 4.17 完成实验七的PPT | 0.5d | 2020-04-23 A | 2020-04-23 A | 102 | 100% | 2020-04-23 | 2020-04-23 | 0.5d |  | 梁远志 [25%] | 1h | 1h |
| 107 | 5.1.18 | 4.18 完成实验六的PPT | 0.5d | 2020-04-23 A | 2020-04-23 A | 102 | 100% | 2020-04-23 | 2020-04-23 | 0.5d |  | 宋冰晨 [25%] | 1h | 1h |
| 108 | 5.1.19 | 4.19 完成实验8和后端开发相关的ppt，整合形成课堂汇报ppt | 0.5d | 2020-04-23 A | 2020-04-23 A | 104, 106, 107 | 100% | 2020-04-23 | 2020-04-23 | 0.5d |  | 赵正阳 [25%] | 1h | 1h |
| 109 | 5.2 | **第9周** | 7d | 2020-04-24 A | 2020-04-30 A | 89 | 100% | 2020-04-24 | 2020-04-30 | 7d |  |  | 41.5h | 41.5h |
| 110 | 5.2.1 | 4.20 第13次组会：明确task和job的状态转移以及组员个人开发任务 | 1d | 2020-04-25 A | 2020-04-25 A |  | 100% | 2020-04-25 | 2020-04-25 | 1d | start no earlier than 2020-04-25 | 郭浩隆 [5%]; 梁远志 [5%]; 沈一聪 [5%]; 宋冰晨 [5%]; 赵正阳 [5%] | 2h | 2h |
| 111 | 5.2.2 | 4.21 更新MS Project至7.0 | 5d | 2020-04-24 A | 2020-04-28 A |  | 100% | 2020-04-24 | 2020-04-28 | 5d |  | 宋冰晨 [12.5%] | 5h | 5h |
| 112 | 5.2.3 | 4.22 完成豆瓣爬虫脚本 | 2d | 2020-04-26 A | 2020-04-27 A | 110 | 100% | 2020-04-26 | 2020-04-27 | 2d |  | 沈一聪 [37.5%] | 6h | 6h |
| 113 | 5.2.4 | 4.23 完成Scheduler的开发和部署工作 | 2d | 2020-04-26 A | 2020-04-27 A | 110 | 100% | 2020-04-26 | 2020-04-27 | 2d |  | 梁远志 [25%] | 4h | 4h |
| 114 | 5.2.5 | 4.24 完成调度器到实际爬虫执行的参数对接和测试 | 1d | 2020-04-28 A | 2020-04-28 A | 112, 113 | 100% | 2020-04-28 | 2020-04-28 | 1d |  | 梁远志 [18.8%]; 沈一聪 [18.8%] | 3h | 3h |
| 115 | 5.2.6 | 4.25 web小组内部组会：重构现有代码，按功能模块拆分为不同app | 1d | 2020-04-29 A | 2020-04-29 A |  | 100% | 2020-04-29 | 2020-04-29 | 1d | start no earlier than 2020-04-29 | 郭浩隆 [8.3%]; 宋冰晨 [8.3%]; 赵正阳 [8.3%] | 2h | 2h |
| 116 | 5.2.7 | 4.26 完成用户登录注册功能的重构、模板相关实体类的重新设计以及读取图片的pic应用 | 1d | 2020-04-30 A | 2020-04-30 A | 115 | 100% | 2020-04-30 | 2020-04-30 | 1d |  | 赵正阳 | 8h | 8h |
| 117 | 5.2.8 | 4.27 完成7个静态页面的修改和url的设计 | 1d | 2020-04-30 A | 2020-04-30 A | 115 | 100% | 2020-04-30 | 2020-04-30 | 1d |  | 宋冰晨 [87.5%] | 7h | 7h |
| 118 | 5.2.9 | 4.28 学习django部分相关内容，将user部分的html文件改成django模板写法，调整user部分路径结构 | 1d | 2020-04-30 A | 2020-04-30 A | 115 | 100% | 2020-04-30 | 2020-04-30 | 1d |  | 郭浩隆 [43.8%] | 3.5h | 3.5h |
| 119 | 5.2.10 | 4.29 完成豆瓣电影的example素材 | 1d | 2020-04-30 A | 2020-04-30 A | 115 | 100% | 2020-04-30 | 2020-04-30 | 1d |  | 沈一聪 [12.5%] | 1h | 1h |

| ID | WBS | Task | Duration | Start | Finish | Predecessors | Complete | Baseline start | Baseline finish | Baseline duration | Constraint | Resources | Work | Actual work |
| --- | --- | --- | --- | --- | --- | --- | --- | --- | --- | --- | --- | --- | --- | --- |
| 120 | 5.3 | **第10周** | 7d | 2020-05-01 A | 2020-05-07 A | 109 | 100% | 2020-05-01 | 2020-05-07 | 7d |  |  | 70h | 70h |
| 121 | 5.3.1 | 4.30 对接spiderTemplate应用的前后端接口 | 1d | 2020-05-01 A | 2020-05-01 A |  | 100% | 2020-05-01 | 2020-05-01 | 1d |  | 宋冰晨 [12.5%]; 赵正阳 [12.5%] | 2h | 2h |
| 122 | 5.3.2 | 4.31 完成spiderTemplate应用的后端视图（创建任务除外） | 1d | 2020-05-02 A | 2020-05-02 A | 121 | 100% | 2020-05-02 | 2020-05-02 | 1d |  | 赵正阳 [37.5%] | 3h | 3h |
| 123 | 5.3.3 | 4.32 spiderTemplate APP下所有页面完成对接后端 | 1d | 2020-05-02 A | 2020-05-02 A | 121 | 100% | 2020-05-02 | 2020-05-02 | 1d |  | 宋冰晨 [37.5%] | 3h | 3h |
| 124 | 5.3.4 | 4.33 增加节点管理页面和Scheduler需要的接口 | 1d | 2020-05-01 A | 2020-05-01 A |  | 100% | 2020-05-01 | 2020-05-01 | 1d |  | 梁远志 [37.5%] | 3h | 3h |
| 125 | 5.3.5 | 4.34 完成管理员功能（模板查看、模板修改、模板上传）界面的编写 | 1d | 2020-05-01 A | 2020-05-01 A |  | 100% | 2020-05-01 | 2020-05-01 | 1d |  | 郭浩隆 | 8h | 8h |
| 126 | 5.3.6 | 4.35 第14次组会：确定实验3设计文档分工和下周开发任务 | 1d | 2020-05-02 A | 2020-05-02 A |  | 100% | 2020-05-02 | 2020-05-02 | 1d | start no earlier than 2020-05-02 | 郭浩隆 [6.2%]; 梁远志 [6.2%]; 沈一聪 [6.2%]; 宋冰晨 [6.2%]; 赵正阳 [6.2%] | 2.5h | 2.5h |
| 127 | 5.3.7 | 4.36 对接task app的任务列表、重命名任务、删除任务、清除数据、下载数据接口 | 1d | 2020-05-03 A | 2020-05-03 A | 126 | 100% | 2020-05-03 | 2020-05-03 | 1d |  | 宋冰晨 [12.5%]; 赵正阳 [12.5%] | 2h | 2h |
| 128 | 5.3.8 | 4.37 实现创建任务、查看任务列表、重命名任务、删除任务、预览数据、下载数据功能 | 2d | 2020-05-04 A | 2020-05-05 A | 127 | 100% | 2020-05-04 | 2020-05-05 | 2d |  | 赵正阳 [75%] | 12h | 12h |
| 129 | 5.3.9 | 4.38 撰写设计文档，绘制ER图并添加文字描述 | 3d | 2020-05-03 A | 2020-05-05 A | 126 | 100% | 2020-05-03 | 2020-05-05 | 3d |  | 赵正阳 [4.2%] | 1h | 1h |
| 130 | 5.3.10 | 4.39 更新MS Project文档至8.0 | 5d | 2020-05-01 A | 2020-05-05 A |  | 100% | 2020-05-01 | 2020-05-05 | 5d |  | 宋冰晨 [2.5%] | 1h | 1h |
| 131 | 5.3.11 | 4.40 将channels添加进Task应用、更新配置文件 | 3d | 2020-05-03 A | 2020-05-05 A | 126 | 100% | 2020-05-03 | 2020-05-05 | 3d |  | 宋冰晨 [6.2%] | 1.5h | 1.5h |
| 132 | 5.3.12 | 4.41 完成普通用户web ui部分设计文档 | 3d | 2020-05-03 A | 2020-05-05 A | 126 | 100% | 2020-05-03 | 2020-05-05 | 3d |  | 宋冰晨 [14.6%] | 3.5h | 3.5h |
| 133 | 5.3.13 | 4.42 完成豆瓣音乐、读书的爬虫 | 2d | 2020-05-03 A | 2020-05-04 A | 126 | 100% | 2020-05-03 | 2020-05-04 | 2d |  | 沈一聪 [25%] | 4h | 4h |
| 134 | 5.3.14 | 4.43 绘制了爬虫模板开发流程图、阐述了开发进度和内容、展示了爬虫结果 | 3d | 2020-05-03 A | 2020-05-05 A | 126 | 100% | 2020-05-03 | 2020-05-05 | 3d |  | 沈一聪 [8.3%] | 2h | 2h |
| 135 | 5.3.15 | 4.44 完成爬虫模板的线上测试 | 1d | 2020-05-05 A | 2020-05-05 A | 133 | 100% | 2020-05-05 | 2020-05-05 | 1d |  | 梁远志 [6.2%]; 沈一聪 [6.2%] | 1h | 1h |
| 136 | 5.3.16 | 4.45 完善Scheduler的开发工作 | 1d | 2020-05-03 A | 2020-05-03 A | 126 | 100% | 2020-05-03 | 2020-05-03 | 1d |  | 梁远志 [12.5%] | 1h | 1h |
| 137 | 5.3.17 | 4.46 完成Scheduler和Django的联合调试 | 2d | 2020-05-06 A | 2020-05-07 A | 128 | 100% | 2020-05-06 | 2020-05-07 | 2d |  | 梁远志 [6.2%]; 赵正阳 [6.2%] | 2h | 2h |
| 138 | 5.3.18 | 4.47 增加Django项目的自动测试 | 3d | 2020-05-03 A | 2020-05-05 A | 126 | 100% | 2020-05-03 | 2020-05-05 | 3d |  | 梁远志 [12.5%] | 3h | 3h |
| 139 | 5.3.19 | 4.48 在部署服务器上部署Channels所需的环境 | 3d | 2020-05-03 A | 2020-05-05 A | 126 | 100% | 2020-05-03 | 2020-05-05 | 3d |  | 梁远志 [2.1%] | 0.5h | 0.5h |
| 140 | 5.3.20 | 4.49 完成调度器的设计文档 | 3d | 2020-05-03 A | 2020-05-05 A | 126 | 100% | 2020-05-03 | 2020-05-05 | 3d |  | 梁远志 [12.5%] | 3h | 3h |
| 141 | 5.3.21 | 4.50 修改管理员功能界面，修改个人信息页面 | 3d | 2020-05-03 A | 2020-05-05 A | 126 | 100% | 2020-05-03 | 2020-05-05 | 3d |  | 郭浩隆 [14.6%] | 3.5h | 3.5h |
| 142 | 5.3.22 | 4.51 完成负责部分的设计文档以及两个模块的流程图 | 3d | 2020-05-03 A | 2020-05-05 A | 126 | 100% | 2020-05-03 | 2020-05-05 | 3d |  | 郭浩隆 [4.2%] | 1h | 1h |
| 143 | 5.3.23 | 4.52 第15次组会：整合文档，确定ppt汇报分工 | 1d | 2020-05-06 A | 2020-05-06 A | 129, 132, 134, 140, 142 | 100% | 2020-05-06 | 2020-05-06 | 1d |  | 郭浩隆 [2.5%]; 梁远志 [2.5%]; 沈一聪 [2.5%]; 宋冰晨 [2.5%]; 赵正阳 [2.5%] | 1h | 1h |
| 144 | 5.3.24 | 4.53 制作实验六燃尽图以及实验三相关PPT | 0.5d | 2020-05-07 A | 2020-05-07 A | 143 | 100% | 2020-05-07 | 2020-05-07 | 0.5d |  | 宋冰晨 [25%] | 1h | 1h |
| 145 | 5.3.25 | 4.54 制作了爬虫模板展示用的幻灯片 | 0.5d | 2020-05-07 A | 2020-05-07 A | 143 | 100% | 2020-05-07 | 2020-05-07 | 0.5d |  | 沈一聪 [25%] | 1h | 1h |
| 146 | 5.3.26 | 4.55 制作了调度器部分展示用的幻灯片 | 0.5d | 2020-05-07 A | 2020-05-07 A | 143 | 100% | 2020-05-07 | 2020-05-07 | 0.5d |  | 梁远志 [25%] | 1h | 1h |
| 147 | 5.3.27 | 4.56 完成管理员等web ui部分的ppt的制作 | 0.5d | 2020-05-07 A | 2020-05-07 A | 143 | 100% | 2020-05-07 | 2020-05-07 | 0.5d |  | 郭浩隆 [25%] | 1h | 1h |
| 148 | 5.3.28 | 4.57 形成工作量统计分析报告v1.2及本周汇报ppt | 0.5d | 2020-05-07 A | 2020-05-07 A | 144, 145, 146, 147 | 100% | 2020-05-07 | 2020-05-07 | 0.5d |  | 赵正阳 [37.5%] | 1.5h | 1.5h |

| ID | WBS | Task | Duration | Start | Finish | Predecessors | Complete | Baseline start | Baseline finish | Baseline duration | Resources | Work | Actual work |
| --- | --- | --- | --- | --- | --- | --- | --- | --- | --- | --- | --- | --- | --- |
| 149 | 6 | **5 软件测试需求分析** | 7d | 2020-05-08 A | 2020-05-14 A |  | 100% | 2020-05-08 | 2020-05-14 | 7d |  | 83h | 83h |
| 150 | 6.1 | **第11周** | 7d | 2020-05-08 A | 2020-05-14 A | 120 | 100% | 2020-05-08 | 2020-05-14 | 7d |  | 83h | 83h |
| 151 | 6.1.1 | 5.1 第16次组会：确定测试需求分析实验的初步分工 | 1d | 2020-05-08 A | 2020-05-08 A |  | 100% | 2020-05-08 | 2020-05-08 | 1d | 郭浩隆 [5%]; 梁远志 [5%]; 沈一聪 [5%]; 宋冰晨 [5%]; 赵正阳 [5%] | 2h | 2h |
| 152 | 6.1.2 | 5.2 实现用户修改个人信息、修改密码、创建模板功能 | 3d | 2020-05-09 A | 2020-05-11 A | 151 | 100% | 2020-05-09 | 2020-05-11 | 3d | 赵正阳 [20.8%] | 5h | 5h |
| 153 | 6.1.3 | 5.3 更新MPP至9.0 | 3d | 2020-05-08 A | 2020-05-10 A |  | 100% | 2020-05-08 | 2020-05-10 | 3d | 宋冰晨 [8.3%] | 2h | 2h |
| 154 | 6.1.4 | 5.4 为templateSetting页面的表单增加前端检查、实现修改任务名、批量删除任务、暂停/终止/重启/继续的前端效果 | 2d | 2020-05-09 A | 2020-05-10 A | 151 | 100% | 2020-05-09 | 2020-05-10 | 2d | 宋冰晨 [37.5%] | 6h | 6h |
| 155 | 6.1.5 | 5.5 实现使用channels推送消息后的前端效果 | 2d | 2020-05-09 A | 2020-05-10 A | 151 | 100% | 2020-05-09 | 2020-05-10 | 2d | 宋冰晨 [12.5%] | 2h | 2h |
| 156 | 6.1.6 | 5.6 实现数据预览、清空数据、下载csv/xlxs/json数据的前端效果 | 2d | 2020-05-09 A | 2020-05-10 A | 151 | 100% | 2020-05-09 | 2020-05-10 | 2d | 宋冰晨 [18.8%] | 3h | 3h |
| 157 | 6.1.7 | 5.7 实现最近编辑的相关设计和前端实现 | 2d | 2020-05-09 A | 2020-05-10 A | 151 | 100% | 2020-05-09 | 2020-05-10 | 2d | 宋冰晨 [18.8%] | 3h | 3h |
| 158 | 6.1.8 | 5.8 对接Task应用的前后端接口 | 0.2d | 2020-05-11 A | 2020-05-11 A | 154, 155, 156, 157 | 100% | 2020-05-11 | 2020-05-11 | 0.2d | 宋冰晨 [46.9%]; 赵正阳 [46.9%] | 1.5h | 1.5h |
| 159 | 6.1.9 | 5.9 完成创建模板等的前端开发任务 | 3d | 2020-05-09 A | 2020-05-11 A | 151 | 100% | 2020-05-09 | 2020-05-11 | 3d | 郭浩隆 [35.4%] | 8.5h | 8.5h |
| 160 | 6.1.10 | 5.10 对接创建模板的接口 | 1d | 2020-05-12 A | 2020-05-12 A | 152, 159 | 100% | 2020-05-12 | 2020-05-12 | 1d | 郭浩隆 [3.1%]; 赵正阳 [3.1%] | 0.5h | 0.5h |
| 161 | 6.1.11 | 5.11 实现重新运行任务、更新任务状态时向前端推送消息功能 | 0.8d | 2020-05-11 A | 2020-05-11 A | 158 | 100% | 2020-05-11 | 2020-05-11 | 0.8d | 赵正阳 [62.5%] | 4h | 4h |
| 162 | 6.1.12 | 5.12 列出测试用例和需求用例的对照表、整理测试规格文档的格式及补充术语 | 2d | 2020-05-09 A | 2020-05-10 A | 151 | 100% | 2020-05-09 | 2020-05-10 | 2d | 梁远志 [18.8%] | 3h | 3h |
| 163 | 6.1.13 | 5.13 解决在服务器部署的Websocket的Bug | 1d | 2020-05-12 A | 2020-05-12 A | 161 | 100% | 2020-05-12 | 2020-05-12 | 1d | 梁远志 [12.5%] | 1h | 1h |
| 164 | 6.1.14 | 5.14 调研软件测试，给出测试用例表、覆盖表、测试方法、工具等 | 2d | 2020-05-09 A | 2020-05-10 A | 151 | 100% | 2020-05-09 | 2020-05-10 | 2d | 沈一聪 [37.5%] | 6h | 6h |
| 165 | 6.1.15 | 5.15 第17次组会：确定覆盖表和PPT分工 | 1d | 2020-05-11 A | 2020-05-11 A | 164, 162 | 100% | 2020-05-11 | 2020-05-11 | 1d | 郭浩隆 [3.8%]; 梁远志 [3.8%]; 沈一聪 [3.8%]; 宋冰晨 [3.8%]; 赵正阳 [3.8%] | 1.5h | 1.5h |
| 166 | 6.1.16 | 5.16 完成web ui部分测试用例和覆盖表的编写 | 3d | 2020-05-12 A | 2020-05-14 A | 165 | 100% | 2020-05-12 | 2020-05-14 | 3d | 宋冰晨 [12.5%] | 3h | 3h |
| 167 | 6.1.17 | 5.17 针对管理员完成测试需求规格说明书和测试覆盖表的填写 | 3d | 2020-05-12 A | 2020-05-14 A | 165 | 100% | 2020-05-12 | 2020-05-14 | 3d | 郭浩隆 [10.4%] | 2.5h | 2.5h |
| 168 | 6.1.18 | 5.18 撰写管理员管理节点的测试用例，完成管理节点的测试用例的测试，形成覆盖表 | 3d | 2020-05-12 A | 2020-05-14 A | 165 | 100% | 2020-05-12 | 2020-05-14 | 3d | 梁远志 [16.7%] | 4h | 4h |
| 169 | 6.1.19 | 5.19 完成修改和删除模板功能、修复bug | 1d | 2020-05-12 A | 2020-05-12 A | 165 | 100% | 2020-05-12 | 2020-05-12 | 1d | 赵正阳 [50%] | 4h | 4h |
| 170 | 6.1.20 | 5.20 完成NFT测试用例表格的设计 | 1d | 2020-05-12 A | 2020-05-12 A | 165 | 100% | 2020-05-12 | 2020-05-12 | 1d | 沈一聪 [25%] | 2h | 2h |
| 171 | 6.1.21 | 5.21 完成Easyspider的非功能需求测试和性能测试工作 | 2d | 2020-05-13 A | 2020-05-14 A | 170 | 100% | 2020-05-13 | 2020-05-14 | 2d | 沈一聪 [31.2%] | 5h | 5h |
| 172 | 6.1.22 | 5.22 完成FT06~FT10五个测试用例的测试，填写覆盖表 | 3d | 2020-05-12 A | 2020-05-14 A | 165 | 100% | 2020-05-12 | 2020-05-14 | 3d | 赵正阳 [8.3%] | 2h | 2h |
| 173 | 6.1.23 | 5.23 第18次组会：测试网站运行情况，确定测试工作和ppt分工 | 1d | 2020-05-13 A | 2020-05-13 A | 163, 160, 169 | 100% | 2020-05-13 | 2020-05-13 | 1d | 郭浩隆 [5%]; 梁远志 [5%]; 沈一聪 [5%]; 宋冰晨 [5%]; 赵正阳 [5%] | 2h | 2h |
| 174 | 6.1.24 | 5.24 完成websocket、html转义、restart未更新最近编辑时间、datatable显示等BUG的修复，增加loading效果和前端阻止用户对同个任务同时进行多个操作 | 1d | 2020-05-14 A | 2020-05-14 A | 173 | 100% | 2020-05-14 | 2020-05-14 | 1d | 宋冰晨 [43.8%] | 3.5h | 3.5h |
| 175 | 6.1.25 | 5.25 完成scrapy爬虫模板的代理池功能 | 1d | 2020-05-14 A | 2020-05-14 A | 173 | 100% | 2020-05-14 | 2020-05-14 | 1d | 沈一聪 [37.5%] | 3h | 3h |
| 176 | 6.1.26 | 5.26 完成测试需求文档其余部分的编写和整合 | 1d | 2020-05-14 A | 2020-05-14 A | 173 | 100% | 2020-05-14 | 2020-05-14 | 1d | 沈一聪 [25%] | 2h | 2h |
| 177 | 6.1.27 | 5.27 优化在测试中发现调度器效率问题 | 1d | 2020-05-14 A | 2020-05-14 A | 173 | 100% | 2020-05-14 | 2020-05-14 | 1d | 梁远志 [12.5%] | 1h | 1h |

| ID | WBS | Task | Duration | Start | Finish | Predecessors | Complete | Baseline start | Baseline finish | Baseline duration | Constraint | Resources | Work | Actual work |
| --- | --- | --- | --- | --- | --- | --- | --- | --- | --- | --- | --- | --- | --- | --- |
| 178 | 7 | **6 软件测试评审** | 16d | 2020-05-15 A | 2020-05-30 A |  | 100% | 2020-05-15 | 2020-05-30 | 16d |  |  | 113h | 113h |
| 179 | 7.1 | **第12周** | 7d | 2020-05-15 A | 2020-05-21 A | 150 | 100% | 2020-05-15 | 2020-05-21 | 7d |  |  | 76h | 76h |
| 180 | 7.1.1 | 6.1 完成普通用户web ui部分测试用例PPT | 0.5d | 2020-05-15 A | 2020-05-15 A |  | 100% | 2020-05-15 | 2020-05-15 | 0.5d |  | 宋冰晨 [25%] | 1h | 1h |
| 181 | 7.1.2 | 6.2 完成非功能需求测试机性能测试部分PPT | 0.5d | 2020-05-15 A | 2020-05-15 A |  | 100% | 2020-05-15 | 2020-05-15 | 0.5d |  | 沈一聪 | 4h | 4h |
| 182 | 7.1.3 | 6.3 完成部署部分和管理节点相关测试的幻灯片 | 0.5d | 2020-05-15 A | 2020-05-15 A |  | 100% | 2020-05-15 | 2020-05-15 | 0.5d |  | 梁远志 [50%] | 2h | 2h |
| 183 | 7.1.4 | 6.4 完成管理员等web ui部分的ppt的制作 | 0.5d | 2020-05-15 A | 2020-05-15 A |  | 100% | 2020-05-15 | 2020-05-15 | 0.5d |  | 郭浩隆 [25%] | 1h | 1h |
| 184 | 7.1.5 | 6.5 制作整合形成课堂汇报PPT | 0.5d | 2020-05-15 A | 2020-05-15 A | 180, 181, 182, 183 | 100% | 2020-05-15 | 2020-05-15 | 0.5d |  | 赵正阳 [12.5%] | 0.5h | 0.5h |
| 185 | 7.1.6 | 6.6 第19次组会：确定测试需求文档补充工作、评审工作的分工和DDL | 1d | 2020-05-15 A | 2020-05-15 A |  | 100% | 2020-05-15 | 2020-05-15 | 1d |  | 郭浩隆 [5%]; 梁远志 [5%]; 沈一聪 [5%]; 宋冰晨 [5%]; 赵正阳 [5%] | 2h | 2h |
| 186 | 7.1.7 | 6.7 更新MPP至10.0 | 7d | 2020-05-15 A | 2020-05-21 A |  | 100% | 2020-05-15 | 2020-05-21 | 7d |  | 宋冰晨 [5.4%] | 3h | 3h |
| 187 | 7.1.8 | 6.8 第20次小组会：确定测试需求文档补充工作、评审工作的分工和DDL | 1d | 2020-05-15 A | 2020-05-15 A |  | 100% | 2020-05-15 | 2020-05-15 | 1d |  | 郭浩隆 [5%]; 梁远志 [5%]; 沈一聪 [5%]; 宋冰晨 [5%]; 赵正阳 [5%] | 2h | 2h |
| 188 | 7.1.9 | 6.9 形成场景测试文档和对应的覆盖表 | 1d | 2020-05-16 A | 2020-05-16 A | 187 | 100% | 2020-05-16 | 2020-05-16 | 1d |  | 宋冰晨 [37.5%] | 3h | 3h |
| 189 | 7.1.10 | 6.10 形成可用性测试结果文档 | 3d | 2020-05-16 A | 2020-05-18 A | 187 | 100% | 2020-05-16 | 2020-05-18 | 3d |  | 宋冰晨 [8.3%] | 2h | 2h |
| 190 | 7.1.11 | 6.11 形成测试计划文档 | 2d | 2020-05-16 A | 2020-05-17 A | 187 | 100% | 2020-05-16 | 2020-05-17 | 2d |  | 宋冰晨 [18.8%] | 3h | 3h |
| 191 | 7.1.12 | 6.12 解决浏览器窗口搜小时布局混乱问题 | 4d | 2020-05-16 A | 2020-05-19 A | 187 | 100% | 2020-05-16 | 2020-05-19 | 4d |  | 宋冰晨 [1.6%] | 0.5h | 0.5h |
| 192 | 7.1.13 | 6.13 新增scrapy单元测试、集成测试、功能测试和Easyspider性能测试方案 | 2d | 2020-05-16 A | 2020-05-17 A | 187 | 100% | 2020-05-16 | 2020-05-17 | 2d |  | 沈一聪 [12.5%] | 2h | 2h |
| 193 | 7.1.14 | 6.14 完成Easyspider-site-douban的单元测试、集成测试和功能测试 | 1d | 2020-05-18 A | 2020-05-18 A | 192 | 100% | 2020-05-18 | 2020-05-18 | 1d |  | 沈一聪 [75%] | 6h | 6h |
| 194 | 7.1.15 | 6.15 形成H-EasySpider-性能测试报告v1.0 | 1d | 2020-05-19 A | 2020-05-19 A | 193 | 100% | 2020-05-19 | 2020-05-19 | 1d |  | 沈一聪 [37.5%] | 3h | 3h |
| 195 | 7.1.16 | 6.16 补充完善软件测试计划 | 1d | 2020-05-18 A | 2020-05-18 A | 190 | 100% | 2020-05-18 | 2020-05-18 | 1d |  | 沈一聪 [12.5%] | 1h | 1h |
| 196 | 7.1.17 | 6.17 修正修改模板页面bug，修改上传页面部分bug | 2d | 2020-05-16 A | 2020-05-17 A | 187 | 100% | 2020-05-16 | 2020-05-17 | 2d |  | 郭浩隆 [12.5%] | 2h | 2h |
| 197 | 7.1.18 | 6.18 制作软件问题表、测试规格说明书评审表和测试规格说明书检查单 | 3d | 2020-05-16 A | 2020-05-18 A | 187 | 100% | 2020-05-16 | 2020-05-18 | 3d |  | 郭浩隆 [6.2%] | 1.5h | 1.5h |
| 198 | 7.1.19 | 6.19 新增调度器单元测试、调度器/Django后端集成测试 | 1d | 2020-05-16 A | 2020-05-16 A | 187 | 100% | 2020-05-16 | 2020-05-16 | 1d |  | 梁远志 [62.5%] | 5h | 5h |
| 199 | 7.1.20 | 6.20 撰写测试规格说明的新增文档 | 1d | 2020-05-17 A | 2020-05-17 A | 198 | 100% | 2020-05-17 | 2020-05-17 | 1d |  | 梁远志 [25%] | 2h | 2h |
| 200 | 7.1.21 | 6.21 整理撰写测试结果及问题报告 | 1d | 2020-05-20 A | 2020-05-20 A | 188, 189, 193, 194 | 100% | 2020-05-20 | 2020-05-20 | 1d |  | 梁远志 [50%] | 4h | 4h |
| 201 | 7.1.22 | 6.22 形成H-EasySpider-测试需求规格说明书v1.1 | 1d | 2020-05-18 A | 2020-05-18 A | 188, 192, 199 | 100% | 2020-05-18 | 2020-05-18 | 1d |  | 赵正阳 [37.5%] | 3h | 3h |
| 202 | 7.1.23 | 6.23 形成H-EasySpider-工作量统计分析报告v1.3 | 4d | 2020-05-15 A | 2020-05-18 A |  | 100% | 2020-05-15 | 2020-05-18 | 4d |  | 赵正阳 [1.6%] | 0.5h | 0.5h |
| 203 | 7.1.24 | 6.24 完成对E组评审并生成7条评审意见和5条软件问题报告 | 1d | 2020-05-20 A | 2020-05-20 A |  | 100% | 2020-05-20 | 2020-05-20 | 1d | start no earlier than 2020-05-20 | 郭浩隆 [43.8%] | 3.5h | 3.5h |
| 204 | 7.1.25 | 6.25 形成对E组的8条评审意见 | 1d | 2020-05-20 A | 2020-05-20 A |  | 100% | 2020-05-20 | 2020-05-20 | 1d | start no earlier than 2020-05-20 | 赵正阳 [25%] | 2h | 2h |
| 205 | 7.1.26 | 6.26 形成对D组的13条测试需求文档的评审意见、8个软件问题、10条测试结果的评审意见 | 1d | 2020-05-20 A | 2020-05-20 A |  | 100% | 2020-05-20 | 2020-05-20 | 1d | start no earlier than 2020-05-20 | 宋冰晨 [25%] | 2h | 2h |
| 206 | 7.1.27 | 6.27 形成对D组的4条评审意见和5个软件问题汇报 | 1d | 2020-05-20 A | 2020-05-20 A |  | 100% | 2020-05-20 | 2020-05-20 | 1d | start no earlier than 2020-05-20 | 沈一聪 [25%] | 2h | 2h |
| 207 | 7.1.28 | 6.28 对D组形成10条评审意见和2个软件问题汇报 | 1d | 2020-05-20 A | 2020-05-20 A |  | 100% | 2020-05-20 | 2020-05-20 | 1d | start no earlier than 2020-05-20 | 梁远志 [25%] | 2h | 2h |
| 208 | 7.1.29 | 6.29 形成对D、E组的评审汇总和软件问题汇总 | 1d | 2020-05-21 A | 2020-05-21 A | 203, 204, 205, 206, 207 | 100% | 2020-05-21 | 2020-05-21 | 1d |  | 郭浩隆 [18.8%] | 1.5h | 1.5h |
| 209 | 7.1.30 | 6.30 将B组和C组的评审意见整理为反馈表并将问题分配到每个组员 | 0.3d | 2020-05-21 A | 2020-05-21 A |  | 100% | 2020-05-21 | 2020-05-21 | 0.3d | start no earlier than 2020-05-21 | 赵正阳 [83.3%] | 2h | 2h |
| 210 | 7.1.31 | 6.31 第21次小组会：确定评审组提出的BUG的修改方案和PPT分工 | 0.2d | 2020-05-21 A | 2020-05-21 A | 209 | 100% | 2020-05-21 | 2020-05-21 | 0.2d | start no earlier than 2020-05-21 | 郭浩隆 [12.5%]; 梁远志 [12.5%]; 沈一聪 [12.5%]; 宋冰晨 [12.5%]; 赵正阳 [12.5%] | 1h | 1h |
| 211 | 7.1.32 | 6.32 修改负责的评审问题和软件问题 | 0.2d | 2020-05-21 A | 2020-05-21 A | 210 | 100% | 2020-05-21 | 2020-05-21 | 0.2d |  | 郭浩隆 [62.5%]; 梁远志 [62.5%]; 沈一聪 [62.5%]; 宋冰晨 [62.5%]; 赵正阳 [62.5%] | 5h | 5h |
| 212 | 7.1.33 | 6.33 制作PPT | 0.2d | 2020-05-21 A | 2020-05-21 A | 211 | 100% | 2020-05-21 | 2020-05-21 | 0.2d |  | 梁远志 [62.5%] | 1h | 1h |

| ID | WBS | Task | Type | Duration | Start | Finish | Predecessors | Complete | Baseline start | Baseline finish | Baseline duration | Constraint | Resources | Work | Actual work |
| --- | --- | --- | --- | --- | --- | --- | --- | --- | --- | --- | --- | --- | --- | --- | --- |
| 213 | 7.2 | **第13周** |  | 7d | 2020-05-22 A | 2020-05-28 A | 179 | 100% | 2020-05-22 | 2020-05-28 | 7d |  |  | 26h | 26h |
| 214 | 7.2.1 | 6.34 制作汇报PPT |  | 0.5d | 2020-05-22 A | 2020-05-22 A |  | 100% | 2020-05-22 | 2020-05-22 | 0.5d |  | 沈一聪 [25%] | 1h | 1h |
| 215 | 7.2.2 | 6.35 完成测试计划、场景测试、github issuse、评审反馈部分PPT |  | 0.5d | 2020-05-22 A | 2020-05-22 A |  | 100% | 2020-05-22 | 2020-05-22 | 0.5d |  | 宋冰晨 [50%] | 2h | 2h |
| 216 | 7.2.3 | 6.36 制作汇报PPT及完成PPT汇总 |  | 0.5d | 2020-05-22 A | 2020-05-22 A | 214, 215 | 100% | 2020-05-22 | 2020-05-22 | 0.5d |  | 赵正阳 [25%] | 1h | 1h |
| 217 | 7.2.4 | 6.37 评审C组测试文档，形成6个文档评审意见、5个软件问题 |  | 1d | 2020-05-27 A | 2020-05-27 A |  | 100% | 2020-05-27 | 2020-05-27 | 1d | start no earlier than 2020-05-27 | 赵正阳 [37.5%] | 3h | 3h |
| 218 | 7.2.5 | 6.38 更新MS Project至11.0 |  | 1d | 2020-05-22 A | 2020-05-22 A |  | 100% | 2020-05-22 | 2020-05-22 | 1d |  | 宋冰晨 [12.5%] | 1h | 1h |
| 219 | 7.2.6 | 6.39 评审C组测试文档，形成26条评审意见和14个软件问题 |  | 1d | 2020-05-27 A | 2020-05-27 A |  | 100% | 2020-05-27 | 2020-05-27 | 1d | start no earlier than 2020-05-27 | 宋冰晨 [25%] | 2h | 2h |
| 220 | 7.2.7 | 6.40 评审C组测试文档，形成10条评审意见和4个软件问题 |  | 1d | 2020-05-27 A | 2020-05-27 A |  | 100% | 2020-05-27 | 2020-05-27 | 1d | start no earlier than 2020-05-27 | 郭浩隆 [43.8%] | 3.5h | 3.5h |
| 221 | 7.2.8 | 6.41 完成对B组的测试评审，形成12条评审意见 |  | 1d | 2020-05-27 A | 2020-05-27 A |  | 100% | 2020-05-27 | 2020-05-27 | 1d | start no earlier than 2020-05-27 | 沈一聪 [25%] | 2h | 2h |
| 222 | 7.2.9 | 6.42 对B组进行测试评审，提出4个文档问题及3个软件问题 |  | 1d | 2020-05-27 A | 2020-05-27 A |  | 100% | 2020-05-27 | 2020-05-27 | 1d | start no earlier than 2020-05-27 | 梁远志 [25%] | 2h | 2h |
| 223 | 7.2.10 | 6.43 整合对B、C组的评审意见，形成H对B、C两组的文档评审意见汇总和软件问题汇总 |  | 1d | 2020-05-28 A | 2020-05-28 A | 217, 219, 220, 221, 222 | 100% | 2020-05-28 | 2020-05-28 | 1d | start no earlier than 2020-05-27 | 郭浩隆 [18.8%] | 1.5h | 1.5h |
| 224 | 7.2.11 | 6.44 根据D组的意见，形成H-EasySpider-测试需求规格说明书v1.3.1 |  | 0.16d | 2020-05-28 A | 2020-05-28 A |  | 100% | 2020-05-28 | 2020-05-28 | 0.16d | start no earlier than 2020-05-28 | 赵正阳 [78.1%] | 1h | 1h |
| 225 | 7.2.12 | 6.45 根据D组的意见，形成H-EasySpider-测试需求规格说明书v1.3.2 |  | 0.16d | 2020-05-28 A | 2020-05-28 A | 224 | 100% | 2020-05-28 | 2020-05-28 | 0.16d | start no earlier than 2020-05-28 | 宋冰晨 [39.1%] | 0.5h | 0.5h |
| 226 | 7.2.13 | 6.46 根据D组的意见，形成H-EasySpider-测试需求规格说明书v1.3.3 |  | 0.16d | 2020-05-28 A | 2020-05-28 A | 225 | 100% | 2020-05-28 | 2020-05-28 | 0.16d |  | 郭浩隆 [39.1%] | 0.5h | 0.5h |
| 227 | 7.2.14 | 6.47 根据D组的意见，形成H-EasySpider-测试需求规格说明书v1.3.4；根据E组的意见，结果分析报告v1.3 |  | 0.16d | 2020-05-28 A | 2020-05-28 A | 226 | 100% | 2020-05-28 | 2020-05-28 | 0.16d |  | 梁远志 [78.1%] | 1h | 1h |
| 228 | 7.2.15 | 6.48 根据E组的意见，形成H-EasySpider-测试需求规格说明书v1.3.5 |  | 0.16d | 2020-05-28 A | 2020-05-28 A | 227 | 100% | 2020-05-28 | 2020-05-28 | 0.16d |  | 赵正阳 [78.1%] | 1h | 1h |
| 229 | 7.2.16 | 6.49 根据E组的意见，形成H-EasySpider-测试需求规格说明书v1.3.6 |  | 0.2d | 2020-05-28 A | 2020-05-28 A | 228 | 100% | 2020-05-28 | 2020-05-28 | 0.2d |  | 宋冰晨 [31.2%] | 0.5h | 0.5h |
| 230 | 7.2.17 | 6.50 根据D、E组的意见形成性能测试报告v2.0 |  | 1d | 2020-05-28 A | 2020-05-28 A |  | 100% | 2020-05-28 | 2020-05-28 | 1d | start no earlier than 2020-05-28 | 沈一聪 [6.2%] | 0.5h | 0.5h |
| 231 | 7.2.18 | 6.51 和C组沟通，达成一致 |  | 1d | 2020-05-28 A | 2020-05-28 A |  | 100% | 2020-05-28 | 2020-05-28 | 1d | start no earlier than 2020-05-28 | 宋冰晨 [25%] | 2h | 2h |
| 232 | 7.3 | **第14周** |  | 2d | 2020-05-29 A | 2020-05-30 A | 213 | 100% | 2020-05-29 | 2020-05-30 | 2d |  |  | 11h | 11h |
| 233 | 7.3.1 | 6.52 与B组沟通评审意见，达成一致 |  | 0.5d | 2020-05-29 A | 2020-05-29 A |  | 100% | 2020-05-29 | 2020-05-29 | 0.5d |  | 沈一聪 [50%] | 2h | 2h |
| 234 | 7.3.2 | 6.53 与B组沟通评审意见，达到一致 |  | 0.5d | 2020-05-29 A | 2020-05-29 A |  | 100% | 2020-05-29 | 2020-05-29 | 0.5d |  | 梁远志 [25%] | 1h | 1h |
| 235 | 7.3.3 | 6.54 形成H-EasySpider-工作量统计分析报告v1.4 |  | 1d | 2020-05-29 A | 2020-05-29 A |  | 100% | 2020-05-29 | 2020-05-29 | 1d |  | 赵正阳 [12.5%] | 1h | 1h |
| 236 | 7.3.4 | 6.55 修复D组和E组报告的各1个缺陷 |  | 2d | 2020-05-29 A | 2020-05-30 A |  | 100% | 2020-05-29 | 2020-05-30 | 2d |  | 宋冰晨 [25%] | 4h | 4h |
| 237 | 7.3.5 | 6.56 制作汇报ppt及汇总 |  | 0.5d | 2020-05-29 A | 2020-05-29 A | 223, 227, 229, 230, 231, 233, 234 | 100% | 2020-05-29 | 2020-05-29 | 0.5d |  | 赵正阳 [25%] | 1h | 1h |
| 238 | 7.3.6 | 6.57 更新MS Project至12.0 |  | 1d | 2020-05-29 A | 2020-05-29 A |  | 100% | 2020-05-29 | 2020-05-29 | 1d |  | 宋冰晨 [25%] | 2h | 2h |
| 239 | 8 | 项目结束 | milestone | 0d | 2020-06-05 A | 2020-06-05 A |  | 100% | 2020-06-05 | 2020-06-05 | 0d | start no earlier than 2020-06-05 |  |  |  |
