# 项目进度计划V1.0new

Schedule from MS Project, 2020-03-06 to 2020-05-02, A marks actual dates.

## Calendars

- 标准: Mon-Sun 08:00-12:00, 13:00-17:00.

## Resources

| Resource |
| --- |
| 赵正阳 |
| 郭浩隆 |
| 沈一聪 |
| 梁远志 |
| 宋冰晨 |

## Schedule

| ID | WBS | Task | Type | Duration | Start | Finish | Predecessors | Complete | Baseline start | Baseline finish | Baseline duration | Resources | Work | Actual work |
| --- | --- | --- | --- | --- | --- | --- | --- | --- | --- | --- | --- | --- | --- | --- |
| 1 | 1 | 项目开始 | milestone | 0d | 2020-03-06 A | 2020-03-06 A |  | 100% | 2020-03-06 | 2020-03-06 | 0d |  |  |  |
| 2 | 2 | **1 实验准备** |  | 14d | 2020-03-06 A | 2020-03-19 A |  | 100% | 2020-03-06 | 2020-03-19 | 14d |  | 56.5h | 56.5h |
| 3 | 2.1 | **第2周** |  | 7d | 2020-03-06 A | 2020-03-12 A |  | 100% | 2020-03-06 | 2020-03-12 | 7d |  | 16h | 16h |
| 4 | 2.1.1 | 1.1 第1次组会：熟悉组员、明确组长和选题 |  | 1d | 2020-03-06 A | 2020-03-06 A |  | 100% | 2020-03-06 | 2020-03-06 | 1d | 郭浩隆 [2.5%]; 梁远志 [2.5%]; 沈一聪 [2.5%]; 宋冰晨 [2.5%]; 赵正阳 [2.5%] | 1h | 1h |
| 5 | 2.1.2 | 1.2 制作实验准备汇报PPT初稿 |  | 2d | 2020-03-07 A | 2020-03-08 A | 4 | 100% | 2020-03-07 | 2020-03-08 | 2d | 赵正阳 [12.5%] | 2h | 2h |
| 6 | 2.1.3 | 1.3 第2次组会：明确各个组员调研方向和对应的PPT部分 |  | 1d | 2020-03-09 A | 2020-03-09 A | 5 | 100% | 2020-03-09 | 2020-03-09 | 1d | 郭浩隆 [2.5%]; 梁远志 [2.5%]; 沈一聪 [2.5%]; 宋冰晨 [2.5%]; 赵正阳 [2.5%] | 1h | 1h |
| 7 | 2.1.4 | 1.4 形成实验准备汇报PPT第二版 |  | 3d | 2020-03-10 A | 2020-03-12 A | 6 | 100% | 2020-03-10 | 2020-03-12 | 3d | 梁远志 [2.8%]; 沈一聪 [2.8%]; 宋冰晨 [2.8%] | 2h | 2h |
| 8 | 2.1.5 | 1.5 调研scrapy |  | 3d | 2020-03-10 A | 2020-03-12 A | 6 | 100% | 2020-03-10 | 2020-03-12 | 3d | 郭浩隆 [8.3%]; 梁远志 [8.3%]; 沈一聪 [8.3%]; 宋冰晨 [8.3%]; 赵正阳 [8.3%] | 10h | 10h |
| 9 | 2.2 | **第3周** |  | 7d | 2020-03-13 A | 2020-03-19 A | 3 | 100% | 2020-03-13 | 2020-03-19 | 7d |  | 40.5h | 40.5h |
| 10 | 2.2.1 | 1.6 第3次组会：分配项目计划书任务 |  | 1d | 2020-03-13 A | 2020-03-13 A |  | 100% | 2020-03-13 | 2020-03-13 | 1d | 郭浩隆 [2.5%]; 梁远志 [2.5%]; 沈一聪 [2.5%]; 宋冰晨 [2.5%]; 赵正阳 [2.5%] | 1h | 1h |
| 11 | 2.2.2 | 1.7 根据分配的任务学习scrapy，阅读源码和文档 |  | 2d | 2020-03-14 A | 2020-03-15 A | 10 | 100% | 2020-03-14 | 2020-03-15 | 2d | 郭浩隆 [12.5%]; 梁远志 [12.5%]; 沈一聪 [12.5%]; 赵正阳 [12.5%] | 8h | 8h |
| 12 | 2.2.3 | 1.8 熟悉git的使用，编写工作日志的模板和使用规范并提交至github |  | 2d | 2020-03-14 A | 2020-03-15 A | 10 | 100% | 2020-03-14 | 2020-03-15 | 2d | 宋冰晨 [15.6%] | 2.5h | 2.5h |
| 13 | 2.2.4 | 1.9 学习MS Project、调研往届计算公式 |  | 2d | 2020-03-14 A | 2020-03-15 A | 10 | 100% | 2020-03-14 | 2020-03-15 | 2d | 宋冰晨 [25%] | 4h | 4h |
| 14 | 2.2.5 | 1.10 完成计划书可视化部分 |  | 2d | 2020-03-14 A | 2020-03-15 A | 10 | 100% | 2020-03-14 | 2020-03-15 | 2d | 郭浩隆 [6.2%] | 1h | 1h |
| 15 | 2.2.6 | 1.11 完成计划书反爬虫部分 |  | 2d | 2020-03-14 A | 2020-03-15 A | 10 | 100% | 2020-03-14 | 2020-03-15 | 2d | 沈一聪 [12.5%] | 2h | 2h |
| 16 | 2.2.7 | 1.12 完成计划书1-2节 |  | 2d | 2020-03-14 A | 2020-03-15 A | 10 | 100% | 2020-03-14 | 2020-03-15 | 2d | 赵正阳 [6.2%] | 1h | 1h |
| 17 | 2.2.8 | 1.13 完成计划书的甘特图、计算公式部分 |  | 2d | 2020-03-14 A | 2020-03-15 A | 10 | 100% | 2020-03-14 | 2020-03-15 | 2d | 宋冰晨 [25%] | 4h | 4h |
| 18 | 2.2.9 | 1.14 完成计划书分布式部分 |  | 1.5d | 2020-03-14 A | 2020-03-15 A | 10 | 100% | 2020-03-14 | 2020-03-15 | 1.5d | 梁远志 [12.5%] | 1.5h | 1.5h |
| 19 | 2.2.10 | 1.15 第4次组会：明确工作日志提交时间，确定项目大体需求 |  | 1d | 2020-03-16 A | 2020-03-16 A | 11, 12, 13, 14, 15, 16, 17, 18 | 100% | 2020-03-16 | 2020-03-16 | 1d | 郭浩隆 [2.5%]; 梁远志 [2.5%]; 沈一聪 [2.5%]; 宋冰晨 [2.5%]; 赵正阳 [2.5%] | 1h | 1h |
| 20 | 2.2.11 | 1.16 调研实验6和实验7的输出，编写实验准备汇报ppt的评审意见文档 |  | 3d | 2020-03-17 A | 2020-03-19 A | 19 | 100% | 2020-03-17 | 2020-03-19 | 3d | 宋冰晨 [4.2%] | 1h | 1h |
| 21 | 2.2.12 | 1.17 整合计划书 |  | 3d | 2020-03-17 A | 2020-03-19 A | 19 | 100% | 2020-03-17 | 2020-03-19 | 3d | 赵正阳 [4.2%] | 1h | 1h |
| 22 | 2.2.13 | 1.18 完成原型爬虫程序 |  | 3d | 2020-03-17 A | 2020-03-19 A | 19 | 100% | 2020-03-17 | 2020-03-19 | 3d | 赵正阳 [20.8%] | 5h | 5h |
| 23 | 2.2.14 | 1.19 阅读原型爬虫程序，思考反爬虫改进 |  | 3d | 2020-03-17 A | 2020-03-19 A | 19 | 100% | 2020-03-17 | 2020-03-19 | 3d | 沈一聪 [12.5%] | 3h | 3h |
| 24 | 2.2.15 | 1.20 部署Scraypd和Scrapydweb |  | 3d | 2020-03-17 A | 2020-03-19 A | 19 | 100% | 2020-03-17 | 2020-03-19 | 3d | 梁远志 [8.3%] | 2h | 2h |
| 25 | 2.2.16 | 1.21 scrapy实践：编写一个基于scrapy的简单爬虫 |  | 3d | 2020-03-17 A | 2020-03-19 A | 19 | 100% | 2020-03-17 | 2020-03-19 | 3d | 郭浩隆 [10.4%] | 2.5h | 2.5h |

| ID | WBS | Task | Duration | Start | Finish | Predecessors | Complete | Baseline start | Baseline finish | Baseline duration | Resources | Work | Actual work |
| --- | --- | --- | --- | --- | --- | --- | --- | --- | --- | --- | --- | --- | --- |
| 26 | 3 | **2 软件需求分析** | 14d | 2020-03-20 A | 2020-04-02 A |  | 100% | 2020-03-20 | 2020-04-02 | 14d |  | 70h | 70h |
| 27 | 3.1 | **第4周** | 7d | 2020-03-20 A | 2020-03-26 A | 9 | 100% | 2020-03-20 | 2020-03-26 | 7d |  | 43h | 43h |
| 28 | 3.1.1 | 2.1 第5次组会：绘制用例图、分配需求文档 | 1d | 2020-03-20 A | 2020-03-20 A |  | 100% | 2020-03-20 | 2020-03-20 | 1d | 郭浩隆 [7.5%]; 梁远志 [7.5%]; 沈一聪 [7.5%]; 宋冰晨 [7.5%]; 赵正阳 [7.5%] | 3h | 3h |
| 29 | 3.1.2 | 2.2 完成需求规格说明书1、2节和scrapy需求分析部分 | 2d | 2020-03-21 A | 2020-03-22 A | 28 | 100% | 2020-03-21 | 2020-03-22 | 2d | 赵正阳 [31.2%] | 5h | 5h |
| 30 | 3.1.3 | 2.3 形成web ui部分需求文档 | 2d | 2020-03-21 A | 2020-03-22 A | 28 | 100% | 2020-03-21 | 2020-03-22 | 2d | 宋冰晨 [12.5%] | 2h | 2h |
| 31 | 3.1.4 | 2.4 重建github目录结构，计划书更新至1.3 | 2d | 2020-03-21 A | 2020-03-22 A | 28 | 100% | 2020-03-21 | 2020-03-22 | 2d | 宋冰晨 [6.2%] | 1h | 1h |
| 32 | 3.1.5 | 2.5 更新MS Project文档至2.0 | 3d | 2020-03-20 A | 2020-03-22 A |  | 100% | 2020-03-20 | 2020-03-22 | 3d | 宋冰晨 [8.3%] | 2h | 2h |
| 33 | 3.1.6 | 2.6 完成web ui部分20个RUCM | 2d | 2020-03-21 A | 2020-03-22 A | 28 | 100% | 2020-03-21 | 2020-03-22 | 2d | 郭浩隆 [18.8%] | 3h | 3h |
| 34 | 3.1.7 | 2.7 完成scrapyd需求文档及数据库部分 | 2d | 2020-03-21 A | 2020-03-22 A | 28 | 100% | 2020-03-21 | 2020-03-22 | 2d | 梁远志 [43.8%] | 7h | 7h |
| 35 | 3.1.8 | 2.8 完成后端及反爬虫部分需求文档 | 2d | 2020-03-21 A | 2020-03-22 A | 28 | 100% | 2020-03-21 | 2020-03-22 | 2d | 沈一聪 [31.2%] | 5h | 5h |
| 36 | 3.1.9 | 2.9 第6次组会：组员各自制作PPT | 1d | 2020-03-23 A | 2020-03-23 A | 29, 30, 33, 34, 35 | 100% | 2020-03-23 | 2020-03-23 | 1d | 郭浩隆 [1.2%]; 梁远志 [1.2%]; 沈一聪 [1.2%]; 宋冰晨 [1.2%]; 赵正阳 [1.2%] | 0.5h | 0.5h |
| 37 | 3.1.10 | 2.10 完成scrapyd及实验七PPT制作 | 2d | 2020-03-24 A | 2020-03-25 A | 36 | 100% | 2020-03-24 | 2020-03-25 | 2d | 梁远志 [12.5%] | 2h | 2h |
| 38 | 3.1.11 | 2.11 完成后端及反爬虫部分PPT制作 | 2d | 2020-03-24 A | 2020-03-25 A | 36 | 100% | 2020-03-24 | 2020-03-25 | 2d | 沈一聪 [12.5%] | 2h | 2h |
| 39 | 3.1.12 | 2.12 形成需求文档1.0 | 2d | 2020-03-24 A | 2020-03-25 A | 36 | 100% | 2020-03-24 | 2020-03-25 | 2d | 赵正阳 [12.5%] | 2h | 2h |
| 40 | 3.1.13 | 2.13 完成web ui原型1.0 | 2d | 2020-03-24 A | 2020-03-25 A | 36 | 100% | 2020-03-24 | 2020-03-25 | 2d | 宋冰晨 [37.5%] | 6h | 6h |
| 41 | 3.1.14 | 2.14 更新计划书至1.4 | 2d | 2020-03-24 A | 2020-03-25 A | 36 | 100% | 2020-03-24 | 2020-03-25 | 2d | 郭浩隆 [9.4%] | 1.5h | 1.5h |
| 42 | 3.1.15 | 2.15 形成需求文档汇报ppt | 1d | 2020-03-26 A | 2020-03-26 A | 37, 38, 39, 40, 41 | 100% | 2020-03-26 | 2020-03-26 | 1d | 赵正阳 [12.5%] | 1h | 1h |
| 43 | 3.2 | **第5周** | 7d | 2020-03-27 A | 2020-04-02 A | 27 | 100% | 2020-03-27 | 2020-04-02 | 7d |  | 27h | 27h |
| 44 | 3.2.1 | 2.16 第7次组会：确定对需求文档的修改分工、分配需求评审表格设计和实验8任务 | 1d | 2020-03-27 A | 2020-03-27 A |  | 100% | 2020-03-27 | 2020-03-27 | 1d | 郭浩隆 [2.5%]; 梁远志 [2.5%]; 沈一聪 [2.5%]; 宋冰晨 [2.5%]; 赵正阳 [2.5%] | 1h | 1h |
| 45 | 3.2.2 | 2.17 更新MS Project文档至3.0 | 3d | 2020-03-27 A | 2020-03-29 A |  | 100% | 2020-03-27 | 2020-03-29 | 3d | 宋冰晨 [4.2%] | 1h | 1h |
| 46 | 3.2.3 | 2.18 扩充需求分析文档的项目背景、用户特点、假定及约束 | 2d | 2020-03-28 A | 2020-03-29 A | 44 | 100% | 2020-03-28 | 2020-03-29 | 2d | 宋冰晨 [12.5%] | 2h | 2h |
| 47 | 3.2.4 | 2.19 调研Django | 3d | 2020-03-27 A | 2020-03-29 A |  | 100% | 2020-03-27 | 2020-03-29 | 3d | 赵正阳 [16.7%] | 4h | 4h |
| 48 | 3.2.5 | 2.20 形成工作量统计分析报告v1.0 | 2d | 2020-03-28 A | 2020-03-29 A | 44 | 100% | 2020-03-28 | 2020-03-29 | 2d | 赵正阳 [9.4%] | 1.5h | 1.5h |
| 49 | 3.2.6 | 2.21 补充了Scrapy框架需求分析的文字描述 | 2d | 2020-03-28 A | 2020-03-29 A | 44 | 100% | 2020-03-28 | 2020-03-29 | 2d | 赵正阳 [6.2%] | 1h | 1h |
| 50 | 3.2.7 | 2.22 扩充需求分析文档的后端需求RUCM文字说明、业务需求 | 2d | 2020-03-28 A | 2020-03-29 A | 44 | 100% | 2020-03-28 | 2020-03-29 | 2d | 沈一聪 [12.5%] | 2h | 2h |
| 51 | 3.2.8 | 2.23 完成需求分析评审表的设计 | 2d | 2020-03-28 A | 2020-03-29 A | 44 | 100% | 2020-03-28 | 2020-03-29 | 2d | 沈一聪 [12.5%] | 2h | 2h |
| 52 | 3.2.9 | 2.24 添加了Scrapyd的介绍、添加了各个RUCM的文字说明 | 2d | 2020-03-28 A | 2020-03-29 A | 44 | 100% | 2020-03-28 | 2020-03-29 | 2d | 梁远志 [12.5%] | 2h | 2h |
| 53 | 3.2.10 | 2.25 扩充web ui部分RUCM的文字描述 | 2d | 2020-03-28 A | 2020-03-29 A | 44 | 100% | 2020-03-28 | 2020-03-29 | 2d | 郭浩隆 [15.6%] | 2.5h | 2.5h |
| 54 | 3.2.11 | 2.26 第8次组会：确定编码、PPT分工 | 1d | 2020-03-30 A | 2020-03-30 A | 46, 48, 49, 50, 51, 52, 53 | 100% | 2020-03-30 | 2020-03-30 | 1d | 郭浩隆 [2.5%]; 梁远志 [2.5%]; 沈一聪 [2.5%]; 宋冰晨 [2.5%]; 赵正阳 [2.5%] | 1h | 1h |
| 55 | 3.2.12 | 2.27 完成需求规格说明书v1.1 | 2d | 2020-03-31 A | 2020-04-01 A | 54 | 100% | 2020-03-31 | 2020-04-01 | 2d | 赵正阳 [6.2%] | 1h | 1h |
| 56 | 3.2.13 | 2.28 完成需求分析评审表部分的PPT制作、练习PPT展示 | 2d | 2020-03-31 A | 2020-04-01 A | 54 | 100% | 2020-03-31 | 2020-04-01 | 2d | 沈一聪 [12.5%] | 2h | 2h |
| 57 | 3.2.14 | 2.29 完成实验6初始数据的展示部分PPT制作 | 2d | 2020-03-31 A | 2020-04-01 A | 54 | 100% | 2020-03-31 | 2020-04-01 | 2d | 宋冰晨 [12.5%] | 2h | 2h |
| 58 | 3.2.15 | 2.30 制作了实验7的展示幻灯片 | 2d | 2020-03-31 A | 2020-04-01 A | 54 | 100% | 2020-03-31 | 2020-04-01 | 2d | 梁远志 [6.2%] | 1h | 1h |
| 59 | 3.2.16 | 2.31 完成实验8的PPT部分及整合工作，形成第六周展示PPT | 1d | 2020-04-02 A | 2020-04-02 A | 55, 56, 57, 58 | 100% | 2020-04-02 | 2020-04-02 | 1d | 赵正阳 [12.5%] | 1h | 1h |

| ID | WBS | Task | Duration | Start | Finish | Predecessors | Complete | Baseline start | Baseline finish | Baseline duration | Constraint | Resources | Work | Actual work |
| --- | --- | --- | --- | --- | --- | --- | --- | --- | --- | --- | --- | --- | --- | --- |
| 60 | 4 | **3 软件需求评审** | 14d | 2020-04-03 A | 2020-04-16 A |  | 100% | 2020-04-03 | 2020-04-16 | 14d |  |  | 40.5h | 40.5h |
| 61 | 4.1 | **第6周** | 7d | 2020-04-03 A | 2020-04-09 A | 43 | 100% | 2020-04-03 | 2020-04-09 | 7d |  |  | 20h | 20h |
| 62 | 4.1.1 | 3.1 更新MS Project至4.0 | 4d | 2020-04-03 A | 2020-04-06 A |  | 100% | 2020-04-03 | 2020-04-06 | 4d |  | 宋冰晨 [4.7%] | 1.5h | 1.5h |
| 63 | 4.1.2 | 3.2 检查F组需求文档，形成12条评审意见 | 1d | 2020-04-06 A | 2020-04-06 A |  | 100% | 2020-04-06 | 2020-04-06 | 1d | start no earlier than 2020-04-06 | 梁远志 [12.5%] | 1h | 1h |
| 64 | 4.1.3 | 3.3 检查F组需求文档，形成14条评审意见 | 1d | 2020-04-06 A | 2020-04-06 A |  | 100% | 2020-04-06 | 2020-04-06 | 1d | start no earlier than 2020-04-06 | 沈一聪 [37.5%] | 3h | 3h |
| 65 | 4.1.4 | 3.4 检查G组需求文档，形成10条评审意见 | 1d | 2020-04-06 A | 2020-04-06 A |  | 100% | 2020-04-06 | 2020-04-06 | 1d | start no earlier than 2020-04-06 | 宋冰晨 [18.8%] | 1.5h | 1.5h |
| 66 | 4.1.5 | 3.5 检查G组需求文档，形成8条评审意见 | 1d | 2020-04-06 A | 2020-04-06 A |  | 100% | 2020-04-06 | 2020-04-06 | 1d | start no earlier than 2020-04-06 | 赵正阳 [12.5%] | 1h | 1h |
| 67 | 4.1.6 | 3.6 检查G组需求文档，形成6条评审意见 | 1d | 2020-04-06 A | 2020-04-06 A |  | 100% | 2020-04-06 | 2020-04-06 | 1d | start no earlier than 2020-04-06 | 郭浩隆 [12.5%] | 1h | 1h |
| 68 | 4.1.7 | 3.7 第9次组会：整合对F和G组的评审意见 | 1d | 2020-04-07 A | 2020-04-07 A | 63, 64, 65, 66, 67 | 100% | 2020-04-07 | 2020-04-07 | 1d |  | 郭浩隆 [5%]; 梁远志 [5%]; 沈一聪 [5%]; 宋冰晨 [5%]; 赵正阳 [5%] | 2h | 2h |
| 69 | 4.1.8 | 3.8 根据评审意见A-2、4、9、10、19和I-5、7、8、9、10、11、20、21、23形成需求文档v1.2.1，以及完成对应PPT的制作 | 0.3d | 2020-04-08 A | 2020-04-08 A |  | 100% | 2020-04-08 | 2020-04-08 | 0.3d | start no earlier than 2020-04-08 | 赵正阳 [41.7%] | 1h | 1h |
| 70 | 4.1.9 | 3.9 根据评审意见A-1、3、5和I-3形成需求文档v1.2.2，以及完成对应PPT的制作 | 0.3d | 2020-04-08 A | 2020-04-08 A | 69 | 100% | 2020-04-08 | 2020-04-08 | 0.3d |  | 宋冰晨 [83.3%] | 2h | 2h |
| 71 | 4.1.10 | 3.10 根据评审意见A-6和I-12、13、14形成需求文档v1.2.3，以及完成对应PPT的制作 | 0.3d | 2020-04-08 A | 2020-04-08 A | 70 | 100% | 2020-04-08 | 2020-04-08 | 0.3d |  | 郭浩隆 [83.3%] | 2h | 2h |
| 72 | 4.1.11 | 3.11 根据评审意见A-15、17、18和I-1、2、18、22、24形成需求文档v1.2.4，以及完成对应PPT的 | 0.3d | 2020-04-08 A | 2020-04-09 A | 71 | 100% | 2020-04-08 | 2020-04-09 | 0.3d |  | 梁远志 [62.5%] | 1.5h | 1.5h |
| 73 | 4.1.12 | 3.12 根据评审意见A-7、8、11、12、13、14、16和I-2、4、6、7、15、16、17、18、19形成需求文档v1.2.5，以及完成对应PPT的制作 | 0.3d | 2020-04-09 A | 2020-04-09 A | 72 | 100% | 2020-04-09 | 2020-04-09 | 0.3d |  | 沈一聪 [83.3%] | 2h | 2h |
| 74 | 4.1.13 | 3.13 整合形成第7周课堂汇报PPT | 0.5d | 2020-04-09 A | 2020-04-09 A | 73 | 100% | 2020-04-09 | 2020-04-09 | 0.5d |  | 赵正阳 [12.5%] | 0.5h | 0.5h |
| 75 | 4.2 | **第7周** | 7d | 2020-04-10 A | 2020-04-16 A | 61 | 100% | 2020-04-10 | 2020-04-16 | 7d |  |  | 20.5h | 20.5h |
| 76 | 4.2.1 | 3.14 更新MS Project至5.0 | 4d | 2020-04-10 A | 2020-04-13 A |  | 100% | 2020-04-10 | 2020-04-13 | 4d |  | 宋冰晨 [3.1%] | 1h | 1h |
| 77 | 4.2.2 | 3.15 检查I组需求文档，形成7条评审意见 | 1d | 2020-04-13 A | 2020-04-13 A |  | 100% | 2020-04-13 | 2020-04-13 | 1d | start no earlier than 2020-04-13 | 郭浩隆 [31.2%] | 2.5h | 2.5h |
| 78 | 4.2.3 | 3.16 检查I组需求文档，形成22条评审意见 | 1d | 2020-04-13 A | 2020-04-13 A |  | 100% | 2020-04-13 | 2020-04-13 | 1d | start no earlier than 2020-04-13 | 梁远志 [25%] | 2h | 2h |
| 79 | 4.2.4 | 3.17 检查I组需求文档，形成18条评审意见 | 1d | 2020-04-13 A | 2020-04-13 A |  | 100% | 2020-04-13 | 2020-04-13 | 1d | start no earlier than 2020-04-13 | 宋冰晨 [25%] | 2h | 2h |
| 80 | 4.2.5 | 3.18 检查A组需求文档，形成6条评审意见 | 1d | 2020-04-13 A | 2020-04-13 A |  | 100% | 2020-04-13 | 2020-04-13 | 1d | start no earlier than 2020-04-13 | 赵正阳 [12.5%] | 1h | 1h |
| 81 | 4.2.6 | 3.19 检查A组需求文档，形成17条评审意见 | 1d | 2020-04-13 A | 2020-04-13 A |  | 100% | 2020-04-13 | 2020-04-13 | 1d | start no earlier than 2020-04-13 | 沈一聪 [25%] | 2h | 2h |
| 82 | 4.2.7 | 3.20 第10次组会：整合对A和I组的评审意见 | 1d | 2020-04-14 A | 2020-04-14 A | 77, 78, 79, 80, 81 | 100% | 2020-04-14 | 2020-04-14 | 1d |  | 郭浩隆 [2.5%]; 梁远志 [2.5%]; 沈一聪 [2.5%]; 宋冰晨 [2.5%]; 赵正阳 [2.5%] | 1h | 1h |
| 83 | 4.2.8 | 3.21 根据评审意见F-1、2、9、10、11、15、16、17、18和G-1、2、6、10、11、14、15、16、21、22形成需求文档v1.3.0，以及完成对应PPT的制作 | 0.4d | 2020-04-15 A | 2020-04-15 A |  | 100% | 2020-04-15 | 2020-04-15 | 0.4d | start no earlier than 2020-04-15 | 赵正阳 [62.5%] | 2h | 2h |
| 84 | 4.2.9 | 3.22 根据评审意见F-4、5和G-3、7、8、9、18形成需求文档v1.3.1，以及完成对应PPT的制作 | 0.4d | 2020-04-15 A | 2020-04-15 A | 83 | 100% | 2020-04-15 | 2020-04-15 | 0.4d |  | 沈一聪 [62.5%] | 2h | 2h |
| 85 | 4.2.10 | 3.23 根据评审意见F-3和G-4、5、17、19、20形成需求文档v1.3.2，以及完成对应PPT的制作 | 0.4d | 2020-04-15 A | 2020-04-16 A | 84 | 100% | 2020-04-15 | 2020-04-16 | 0.4d |  | 梁远志 [62.5%] | 2h | 2h |
| 86 | 4.2.11 | 3.24 根据评审意见F-6、7、8、12、13、14、19、20、21和G-12、13形成需求文档v1.3.3，以及完成对应PPT的制作 | 0.4d | 2020-04-16 A | 2020-04-16 A | 85 | 100% | 2020-04-16 | 2020-04-16 | 0.4d |  | 宋冰晨 [78.1%] | 2.5h | 2.5h |
| 87 | 4.2.12 | 3.25 整合形成课堂汇报PPT | 0.4d | 2020-04-16 A | 2020-04-16 A | 86 | 100% | 2020-04-16 | 2020-04-16 | 0.4d |  | 赵正阳 [15.6%] | 0.5h | 0.5h |

| ID | WBS | Task | Duration | Start | Finish | Predecessors | Complete | Baseline start | Baseline finish | Baseline duration | Constraint | Resources | Work | Actual work |
| --- | --- | --- | --- | --- | --- | --- | --- | --- | --- | --- | --- | --- | --- | --- |
| 88 | 5 | **4 软件设计与实现** | 16d | 2020-04-17 A | 2020-05-02 A |  | 100% | 2020-04-17 | 2020-05-02 | 16d |  |  | 115h | 115h |
| 89 | 5.1 | **第8周** | 7d | 2020-04-17 A | 2020-04-23 A | 75 | 100% | 2020-04-17 | 2020-04-23 | 7d |  |  | 54.5h | 54.5h |
| 90 | 5.1.1 | 4.1 第11次组会：确定对评审组检查工作和初步开发工作的分工 | 1d | 2020-04-17 A | 2020-04-17 A |  | 100% | 2020-04-17 | 2020-04-17 | 1d |  | 郭浩隆 [2.5%]; 梁远志 [2.5%]; 沈一聪 [2.5%]; 宋冰晨 [2.5%]; 赵正阳 [2.5%] | 1h | 1h |
| 91 | 5.1.2 | 4.2 更新MS Project至6.0 | 5d | 2020-04-17 A | 2020-04-21 A |  | 100% | 2020-04-17 | 2020-04-21 | 5d |  | 宋冰晨 [5%] | 2h | 2h |
| 92 | 5.1.3 | 4.3 检查A、G组的修改情况 | 1d | 2020-04-21 A | 2020-04-21 A | 90 | 100% | 2020-04-21 | 2020-04-21 | 1d | start no earlier than 2020-04-21 | 赵正阳 [6.2%] | 0.5h | 0.5h |
| 93 | 5.1.4 | 4.4 检查A、F组的修改情况 | 1d | 2020-04-21 A | 2020-04-21 A | 90 | 100% | 2020-04-21 | 2020-04-21 | 1d | start no earlier than 2020-04-21 | 沈一聪 [12.5%] | 1h | 1h |
| 94 | 5.1.5 | 4.5 检查I、F组的修改情况 | 1d | 2020-04-21 A | 2020-04-21 A | 90 | 100% | 2020-04-21 | 2020-04-21 | 1d | start no earlier than 2020-04-21 | 梁远志 [12.5%] | 1h | 1h |
| 95 | 5.1.6 | 4.6 检查I、G组的修改情况 | 1d | 2020-04-21 A | 2020-04-21 A | 90 | 100% | 2020-04-21 | 2020-04-21 | 1d | start no earlier than 2020-04-21 | 宋冰晨 [12.5%] | 1h | 1h |
| 96 | 5.1.7 | 4.7 检查I、G组的修改情况 | 1d | 2020-04-21 A | 2020-04-21 A | 90 | 100% | 2020-04-21 | 2020-04-21 | 1d | start no earlier than 2020-04-21 | 郭浩隆 [25%] | 2h | 2h |
| 97 | 5.1.8 | 4.8 完成基本网站后端开发 | 4d | 2020-04-18 A | 2020-04-21 A | 90 | 100% | 2020-04-18 | 2020-04-21 | 4d |  | 赵正阳 [25%] | 8h | 8h |
| 98 | 5.1.9 | 4.9 实现针对普通用户的静态页面 | 4d | 2020-04-18 A | 2020-04-21 A | 90 | 100% | 2020-04-18 | 2020-04-21 | 4d |  | 宋冰晨 [31.2%] | 10h | 10h |
| 99 | 5.1.10 | 4.10 完成Top250movie的爬虫 | 4d | 2020-04-18 A | 2020-04-21 A | 90 | 100% | 2020-04-18 | 2020-04-21 | 4d |  | 沈一聪 [25%] | 8h | 8h |
| 100 | 5.1.11 | 4.11 完成调度器基本的节点操作和作业操作 | 4d | 2020-04-18 A | 2020-04-21 A | 90 | 100% | 2020-04-18 | 2020-04-21 | 4d |  | 梁远志 [12.5%] | 4h | 4h |
| 101 | 5.1.12 | 4.12 完成用户登录、注册等静态页面的编写 | 4d | 2020-04-18 A | 2020-04-21 A | 90 | 100% | 2020-04-18 | 2020-04-21 | 4d |  | 郭浩隆 [21.9%] | 7h | 7h |
| 102 | 5.1.13 | 4.13 第12次组会：组员展示目前的开发进展，确定对评审的4个组的排序规则和下一步的开发工作目标 | 1d | 2020-04-22 A | 2020-04-22 A | 97, 98, 99, 100, 101 | 100% | 2020-04-22 | 2020-04-22 | 1d |  | 郭浩隆 [3.8%]; 梁远志 [3.8%]; 沈一聪 [3.8%]; 宋冰晨 [3.8%]; 赵正阳 [3.8%] | 1.5h | 1.5h |
| 103 | 5.1.14 | 4.14 协调GitHub上项目分工合并 | 1d | 2020-04-22 A | 2020-04-22 A | 97, 98, 101 | 100% | 2020-04-22 | 2020-04-22 | 1d |  | 梁远志 [25%] | 2h | 2h |
| 104 | 5.1.15 | 4.15 形成工作量统计分析报告v1.1 | 0.5d | 2020-04-23 A | 2020-04-23 A | 102 | 100% | 2020-04-23 | 2020-04-23 | 0.5d |  | 赵正阳 [12.5%] | 0.5h | 0.5h |
| 105 | 5.1.16 | 4.16 与梁远志探讨了项目的数据库结构、参数接口、调度等方面的设计，形成设计文档 | 1d | 2020-04-23 A | 2020-04-23 A | 102 | 100% | 2020-04-23 | 2020-04-23 | 1d |  | 沈一聪 [25%] | 2h | 2h |
| 106 | 5.1.17 | 4.17 完成实验七的PPT | 0.5d | 2020-04-23 A | 2020-04-23 A | 102 | 100% | 2020-04-23 | 2020-04-23 | 0.5d |  | 梁远志 [25%] | 1h | 1h |
| 107 | 5.1.18 | 4.18 完成实验六的PPT | 0.5d | 2020-04-23 A | 2020-04-23 A | 102 | 100% | 2020-04-23 | 2020-04-23 | 0.5d |  | 宋冰晨 [25%] | 1h | 1h |
| 108 | 5.1.19 | 4.19 完成实验8和后端开发相关的ppt，整合形成课堂汇报ppt | 0.5d | 2020-04-23 A | 2020-04-23 A | 104, 106, 107 | 100% | 2020-04-23 | 2020-04-23 | 0.5d |  | 赵正阳 [25%] | 1h | 1h |
| 109 | 5.2 | **第9周** | 7d | 2020-04-24 A | 2020-04-30 A | 89 | 100% | 2020-04-24 | 2020-04-30 | 7d |  |  | 41.5h | 41.5h |
| 110 | 5.2.1 | 4.20 第12次组会：明确task和job的状态转移以及组员个人开发任务 | 1d | 2020-04-25 A | 2020-04-25 A |  | 100% | 2020-04-25 | 2020-04-25 | 1d | start no earlier than 2020-04-25 | 郭浩隆 [5%]; 梁远志 [5%]; 沈一聪 [5%]; 宋冰晨 [5%]; 赵正阳 [5%] | 2h | 2h |
| 111 | 5.2.2 | 4.21 更新MS Project至7.0 | 5d | 2020-04-24 A | 2020-04-28 A |  | 100% | 2020-04-24 | 2020-04-28 | 5d |  | 宋冰晨 [12.5%] | 5h | 5h |
| 112 | 5.2.3 | 4.22 完成豆瓣爬虫脚本 | 2d | 2020-04-26 A | 2020-04-27 A | 110 | 100% | 2020-04-26 | 2020-04-27 | 2d |  | 沈一聪 [37.5%] | 6h | 6h |
| 113 | 5.2.4 | 4.23 完成Scheduler的开发和部署工作 | 2d | 2020-04-26 A | 2020-04-27 A | 110 | 100% | 2020-04-26 | 2020-04-27 | 2d |  | 梁远志 [25%] | 4h | 4h |
| 114 | 5.2.5 | 4.24 完成调度器到实际爬虫执行的参数对接和测试 | 1d | 2020-04-28 A | 2020-04-28 A | 112, 113 | 100% | 2020-04-28 | 2020-04-28 | 1d |  | 梁远志 [18.8%]; 沈一聪 [18.8%] | 3h | 3h |
| 115 | 5.2.6 | 4.25 web小组内部组会：重构现有代码，按功能模块拆分为不同app | 1d | 2020-04-29 A | 2020-04-29 A |  | 100% | 2020-04-29 | 2020-04-29 | 1d | start no earlier than 2020-04-29 | 郭浩隆 [8.3%]; 宋冰晨 [8.3%]; 赵正阳 [8.3%] | 2h | 2h |
| 116 | 5.2.7 | 4.26 完成用户登录注册功能的重构、模板相关实体类的重新设计以及读取图片的pic应用 | 1d | 2020-04-30 A | 2020-04-30 A | 115 | 100% | 2020-04-30 | 2020-04-30 | 1d |  | 赵正阳 | 8h | 8h |
| 117 | 5.2.8 | 4.27 完成7个静态页面的修改和url的设计 | 1d | 2020-04-30 A | 2020-04-30 A | 115 | 100% | 2020-04-30 | 2020-04-30 | 1d |  | 宋冰晨 [87.5%] | 7h | 7h |
| 118 | 5.2.9 | 4.28 学习django部分相关内容，将user部分的html文件改成django模板写法，调整user部分路径结构 | 1d | 2020-04-30 A | 2020-04-30 A | 115 | 100% | 2020-04-30 | 2020-04-30 | 1d |  | 郭浩隆 [43.8%] | 3.5h | 3.5h |
| 119 | 5.2.10 | 4.29 完成豆瓣电影的example素材 | 1d | 2020-04-30 A | 2020-04-30 A | 115 | 100% | 2020-04-30 | 2020-04-30 | 1d |  | 沈一聪 [12.5%] | 1h | 1h |

| ID | WBS | Task | Duration | Start | Finish | Predecessors | Complete | Baseline start | Baseline finish | Baseline duration | Resources | Work | Actual work |
| --- | --- | --- | --- | --- | --- | --- | --- | --- | --- | --- | --- | --- | --- |
| 120 | 5.3 | **第10周** | 2d | 2020-05-01 A | 2020-05-02 A | 109 | 100% | 2020-05-01 | 2020-05-02 | 2d |  | 19h | 19h |
| 121 | 5.3.1 | 4.30 对接spiderTemplate应用的前后端接口 | 1d | 2020-05-01 A | 2020-05-01 A |  | 100% | 2020-05-01 | 2020-05-01 | 1d | 宋冰晨 [12.5%]; 赵正阳 [12.5%] | 2h | 2h |
| 122 | 5.3.2 | 4.31 完成spiderTemplate应用的后端视图（创建任务除外） | 1d | 2020-05-02 A | 2020-05-02 A | 121 | 100% | 2020-05-02 | 2020-05-02 | 1d | 赵正阳 [37.5%] | 3h | 3h |
| 123 | 5.3.3 | 4.32 spiderTemplate APP下所有页面完成对接后端 | 1d | 2020-05-02 A | 2020-05-02 A | 121 | 100% | 2020-05-02 | 2020-05-02 | 1d | 宋冰晨 [37.5%] | 3h | 3h |
| 124 | 5.3.4 | 4.33 增加节点管理页面和Scheduler需要的接口 | 1d | 2020-05-01 A | 2020-05-01 A |  | 100% | 2020-05-01 | 2020-05-01 | 1d | 梁远志 [37.5%] | 3h | 3h |
| 125 | 5.3.5 | 4.34 完成管理员功能（模板查看、模板修改、模板上传）界面的编写 | 1d | 2020-05-01 A | 2020-05-01 A |  | 100% | 2020-05-01 | 2020-05-01 | 1d | 郭浩隆 | 8h | 8h |
